# USP Projekat 2018

How a schedule from MS Project changed from version to version. A marks actual dates.

## Version 1 (saved 2018-05-30)

Note of the change: started MS Project

| ID | WBS | Task | Duration | Start | Finish | Predecessors | Total float | Constraint |
| --- | --- | --- | --- | --- | --- | --- | --- | --- |
| 1 |  | WP1 - Analiza tržišta i korisničkih zahteva | 88d | 2018-07-02 | 2018-10-31 |  |  | finish no earlier than 2018-10-31 |
| 2 |  | Prekretnica - Završena analiza zahteva i tržišta | 0d | 2018-11-01 | 2018-11-01 | 1 |  |  |
| 3 | 3 | **WP2 - Planiranje projekta** | 65d | 2018-11-01 | 2019-01-31 | 1 |  |  |
| 4 |  | Planiranje budžeta | 65d | 2018-11-01 | 2019-01-31 | 5FF, 6FF | 0d |  |
| 5 |  | Planiranje resursa | 40d | 2018-11-01 | 2018-12-26 |  | 0d |  |
| 6 |  | Planiranje rizika | 40d | 2018-11-01 | 2018-12-26 |  | 0d |  |
| 7 |  | Raspodela posla po participantima | 35d | 2018-11-01 | 2018-12-19 |  | 0d |  |
| 8 |  | Određivanje aktivnosti unutar svih faza projekta | 30d | 2018-12-20 | 2019-01-31 | 7 | 0d |  |
| 9 |  | Određivanje mere kvaliteta i postupaka | 25d | 2018-12-27 | 2019-01-31 | 5, 6 |  |  |
| 10 |  | Određivanje načina komunikacije | 25d | 2018-12-27 | 2019-01-31 | 5, 6 |  |  |
| 11 |  | Prekretnica - Završen plan projekta | 0d | 2019-02-01 | 2019-02-01 | 3 |  |  |
| 12 | 5 | **WP3 - Modelovanje i dizajn** | 106d | 2019-02-01 | 2019-06-28 | 3 |  |  |
| 13 | 5.1 | **Modelovanje i dizajn veb-portala** | 106d | 2019-02-01 | 2019-06-28 |  | 0d |  |
| 14 |  | Izrada dijagrama slučajeva korišćenja | 30d | 2019-02-01 | 2019-03-14 |  | 0d |  |
| 15 |  | Izrada dijagrama klasa | 76d | 2019-03-15 | 2019-06-28 | 14 | 0d |  |
| 16 |  | Izrada dijagrama sekvenci | 76d | 2019-03-15 | 2019-06-28 | 14 | 0d |  |
| 17 | 5.2 | **Modelovanje i dizajn pametne kante** | 106d | 2019-02-01 | 2019-06-28 |  | 0d |  |
| 18 |  | Dizajn spoljašnjosti kante | 106d | 2019-02-01 | 2019-06-28 |  | 0d |  |
| 19 |  | Modelovanje arhitekture računara | 46d | 2019-02-01 | 2019-04-05 |  | 0d |  |
| 20 |  | Dizajn unutrašnjosti kante | 60d | 2019-04-08 | 2019-06-28 | 19 | 0d |  |
| 21 |  | Prekretnica - Završeno modelovanje sistema | 0d | 2019-07-01 | 2019-07-01 | 12 |  |  |
| 22 | 7 | **WP4 - Izrada prototipa pametne kante** | 66d | 2019-07-01 | 2019-09-30 | 12 |  |  |
| 23 |  | Izrada prototipa pametne kante | 40d | 2019-07-01 | 2019-08-23 |  | 0d |  |
| 24 |  | Izrada interfejsa prema softverskoj komponenti | 40d | 2019-07-01 | 2019-08-23 |  | 0d |  |
| 25 |  | Izrada grafičkog korisničkog interfejsa | 40d | 2019-07-01 | 2019-08-23 |  | 0d |  |
| 26 |  | Integracija i validacija prototipa | 26d | 2019-08-26 | 2019-09-30 | 23, 24, 25 |  |  |
| 27 | 8 | **WP5 - Izrada prototipa veb-portala** | 45d | 2019-07-01 | 2019-08-30 | 12 |  |  |
| 28 |  | Izrada glavnih stranica | 35d | 2019-07-01 | 2019-08-16 |  | 0d |  |
| 29 |  | Izrada stranica za korisnike | 35d | 2019-07-01 | 2019-08-16 |  | 0d |  |
| 30 |  | Izrada stranica za administratore | 35d | 2019-07-01 | 2019-08-16 |  | 0d |  |
| 31 |  | Validacija i integracija prototipa | 10d | 2019-08-19 | 2019-08-30 | 28, 29, 30 |  |  |
| 32 |  | Prekretnica - Izrađeni prototipi | 0d | 2019-10-01 | 2019-10-01 | 22, 27 |  |  |
| 33 | 10 | **WP6 - Implementacija pametne kante** | 172d | 2019-10-01 | 2020-05-29 | 22 |  |  |
| 34 |  | Kreiranje hardverske komponente | 90d | 2019-10-01 | 2020-02-05 |  | 0d |  |
| 35 |  | Izrada grafičkog korisničkog interfejsa | 60d | 2019-10-01 | 2019-12-23 |  | 112d |  |
| 36 | 10.3 | **Konfiguracija hardverske komponente** | 82d | 2020-02-06 | 2020-05-29 | 34 | 0d |  |
| 37 |  | Dodavanje matične ploče | 30d | 2020-02-06 | 2020-03-18 |  | 0d |  |
| 38 |  | Dodavanje čipova | 15d | 2020-03-19 | 2020-04-08 | 37 | 0d |  |
| 39 |  | Dodavanje LCD displeja | 15d | 2020-04-09 | 2020-04-29 | 38 | 0d |  |
| 40 |  | Dodavanje senzora | 15d | 2020-04-30 | 2020-05-20 | 39 | 0d |  |
| 41 |  | Dodavanje mini modema | 7d | 2020-05-21 | 2020-05-29 | 40 | 0d |  |
| 42 | 11 | **WP7 - Implementacija veb-portala** | 193d | 2019-09-02 | 2020-05-29 | 27 |  |  |
| 43 | 11.1 | **Frontend implementacija** | 150d | 2019-09-02 | 2020-03-31 |  | 0d |  |
| 44 |  | Izrada glavnih stranica | 50d | 2019-09-02 | 2019-11-08 |  | 0d |  |
| 45 |  | Izrada stranica za korisnike | 50d | 2019-11-11 | 2020-01-21 | 44 | 0d |  |
| 46 |  | Izrada stranica za administratore | 50d | 2020-01-22 | 2020-03-31 | 45 | 0d |  |
| 47 | 11.2 | **Backend implementacija** | 150d | 2019-09-02 | 2020-03-31 |  | 0d |  |
| 48 |  | Izrada kontrolera | 120d | 2019-09-02 | 2020-02-18 |  | 0d |  |
| 49 |  | Omogućavanje komunikacije sa bazom | 20d | 2019-09-02 | 2019-09-27 |  | 0d |  |
| 50 |  | Implementacija biznis logike | 60d | 2019-09-30 | 2019-12-20 | 49 | 0d |  |
| 51 |  | Izrada modela | 40d | 2019-12-23 | 2020-02-18 | 50 | 0d |  |
| 52 |  | Povezivanje sa sistemom za naplatu | 30d | 2020-02-19 | 2020-03-31 | 48, 51 | 0d |  |
| 53 |  | Integracija frontend i backend dela | 43d | 2020-04-01 | 2020-05-29 | 43, 47 | 0d |  |
| 54 |  | Prekretnica - Završena implementacija | 0d | 2020-06-01 | 2020-06-01 | 33, 42 |  |  |
| 55 | 13 | **WP8 - Testiranje pametne kante** | 88d | 2020-06-01 | 2020-09-30 | 33 |  |  |
| 56 |  | Izrada testova | 30d | 2020-06-01 | 2020-07-10 |  | 0d |  |
| 57 |  | Pokretanje testova | 58d | 2020-07-13 | 2020-09-30 | 56 | 0d |  |
| 58 | 14 | **WP9 - Testiranje veb-portala** | 88d | 2020-06-01 | 2020-09-30 | 42 |  |  |
| 59 |  | Izrada testova | 50d | 2020-06-01 | 2020-08-07 |  | 0d |  |
| 60 |  | Pokretanje testova | 38d | 2020-08-10 | 2020-09-30 | 59 | 0d |  |
| 61 |  | Prekretnica - Završeno testiranje | 0d | 2020-10-01 | 2020-10-01 | 55, 58 |  |  |
| 62 | 16 | **WP10 - Integracija hardvera i softvera** | 43d | 2020-10-01 | 2020-11-30 | 55, 58 |  |  |
| 63 |  | Koordinisanje postupka integracije | 43d | 2020-10-01 | 2020-11-30 |  | 0d |  |
| 64 |  | Omogućavanje integracije hardvera | 10d | 2020-10-01 | 2020-10-14 |  | 0d |  |
| 65 |  | Omogućavanje integracije softvera | 5d | 2020-10-01 | 2020-10-07 |  | 5d |  |
| 66 |  | Integracija | 33d | 2020-10-15 | 2020-11-30 | 64, 65 | 0d |  |
| 67 | 17 | **WP11 - Integraciono testiranje** | 108d | 2020-12-01 | 2021-04-30 | 62 |  |  |
| 68 |  | Izrada testova | 40d | 2020-12-01 | 2021-01-26 |  | 0d |  |
| 69 |  | Pokretanje testova | 58d | 2021-01-27 | 2021-04-16 | 68 | 0d |  |
| 70 |  | Popravljanje problema | 10d | 2021-04-19 | 2021-04-30 | 69 | 0d |  |

| ID | WBS | Task | Duration | Start | Finish | Predecessors | Total float |
| --- | --- | --- | --- | --- | --- | --- | --- |
| 71 |  | Prekretnica - Integrisana hardverska i softverska komponenta | 0d | 2021-05-03 | 2021-05-03 | 62, 67 |  |
| 72 | 19 | **WP12 - Puštanje sistema u rad** | 43d | 2021-05-03 | 2021-06-30 | 67 |  |
| 73 |  | Postavljanje kanti | 43d | 2021-05-03 | 2021-06-30 |  | 0d |
| 74 |  | Instalacija softvera | 43d | 2021-05-03 | 2021-06-30 |  | 0d |
| 75 |  | Postavljanje veb-portala na Internet | 43d | 2021-05-03 | 2021-06-30 |  | 0d |
| 76 |  | Administracija postupka puštanja sistema u rad | 43d | 2021-05-03 | 2021-06-30 |  | 0d |
| 77 |  | Obuka osoblja i korisnika | 43d | 2021-05-03 | 2021-06-30 |  | 0d |
| 78 |  | Obezbeđivanje mehanizma za podršku | 10d | 2021-05-03 | 2021-05-14 |  | 33d |
| 79 |  | Prekretnica - Pušten sistem u rad | 0d | 2021-07-01 | 2021-07-01 | 72 |  |
| 80 | 21 | **WP13 - Evaluacija i disiminacija** | 194d | 2020-10-01 | 2021-06-30 | 55, 58 |  |
| 81 |  | Prikupljanje utisaka | 194d | 2020-10-01 | 2021-06-30 |  | 0d |
| 82 |  | Promovisanje proizvoda | 194d | 2020-10-01 | 2021-06-30 |  | 0d |
| 83 |  | Organizovanje marketinških kampanja | 100d | 2020-10-01 | 2021-02-18 |  | 0d |
| 84 |  | Obezbeđivanje reklamnog materijala | 80d | 2020-10-01 | 2021-01-21 |  | 114d |
| 85 |  | Učestvovanje na sajmovima i konferencijama | 94d | 2021-02-19 | 2021-06-30 | 83 | 0d |
| 86 |  | Prekretnica - Završena evaluacija i disiminacija | 0d | 2021-07-01 | 2021-07-01 | 80 |  |
| 87 | 23 | **WP14 - Upravljanje projektom** | 779d | 2018-07-02 | 2021-06-30 |  |  |
| 88 |  | Rukovođenje projektom | 1d? | 2018-07-02 | 2018-07-02 |  |  |
| 89 |  | Minimalizacija budžeta | 1d? | 2018-07-02 | 2018-07-02 |  |  |
| 90 |  | Minimalizacija rizika | 1d? | 2018-07-02 | 2018-07-02 |  |  |
| 91 |  | Minimalizacija iskorišćenja resursa | 1d? | 2018-07-02 | 2018-07-02 |  |  |
| 92 |  | Upravljanje aktivnostima | 1d? | 2018-07-02 | 2018-07-02 |  |  |
| 93 |  | Nedeljni sastanak - video konferencija | 1d? | 2018-07-02 | 2018-07-02 |  |  |
| 94 |  | Dorada MS Project fajla | 1d? | 2018-07-02 | 2018-07-02 |  |  |
| 95 |  | Upravljanje merama kvailteta i postupcima | 1d? | 2018-07-02 | 2018-07-02 |  |  |
| 96 |  | Upravljanje načinom komunikacije | 1d? | 2018-07-02 | 2018-07-02 |  |  |

## Version 2 (saved 2018-05-31)

Note of the change: added resources to MS Project

Last finish stays 2021-07-01.

Changed:

| ID | Task | Finish | Duration | Total float |
| --- | --- | --- | --- | --- |
| 88 | Rukovođenje projektom | 2018-07-02 → 2021-06-30 (+1094d) | 1d? → 779d | none → 0d |
| 92 | Upravljanje aktivnostima | 2018-07-02 → 2021-06-30 (+1094d) | 1d? → 779d | none → 0d |

## Version 3 (saved 2018-06-01)

Note of the change: Updated MS Project file

Last finish stays 2021-07-01.

Added:

| ID | Task | Duration | Start | Finish | Predecessors | Constraint |
| --- | --- | --- | --- | --- | --- | --- |
| 2 | **Analiza tržišta** | 44d | 2018-07-02 | 2018-08-30 |  |  |
| 3 | **Iniciranje analize tržišta** | 5d | 2018-07-02 | 2018-07-06 |  |  |
| 4 | Selekcija ljudi | 2d | 2018-07-02 | 2018-07-03 |  |  |
| 5 | Formiranje timova | 2d | 2018-07-04 | 2018-07-05 | 4 |  |
| 6 | Dobijanje odobrenja o validnosti timova | 1d | 2018-07-06 | 2018-07-06 | 5 |  |
| 7 | **Planiranje analize tržišta** | 10d | 2018-07-09 | 2018-07-20 | 3 |  |
| 8 | Definisanje svih potrebnih aktivnosti faze | 5d | 2018-07-09 | 2018-07-13 |  |  |
| 9 | Dodeljivanje aktivnosti timovima | 2d | 2018-07-16 | 2018-07-17 | 8 |  |
| 10 | Iniciranje kontakta sa komunalnim službama | 7d | 2018-07-09 | 2018-07-17 |  |  |
| 11 | Dodeljivanje lokacija timovima | 1d | 2018-07-18 | 2018-07-18 | 10, 9 |  |
| 12 | Pisanje izveštaja o planu | 1d | 2018-07-19 | 2018-07-19 | 11 |  |
| 13 | Dobijanje dozvole od višeg menadžmenta | 1d | 2018-07-20 | 2018-07-20 | 12 |  |
| 14 | **Izvršavanje analize tržišta** | 24d | 2018-07-23 | 2018-08-23 | 7 |  |
| 15 | Prepoznavanje trenutnog stanja | 2d | 2018-07-23 | 2018-07-24 |  |  |
| 16 | **Rad na terenu** | 20d | 2018-07-25 | 2018-08-21 | 15 |  |
| 17 | **Rad na terenu 1** | 5d | 2018-07-25 | 2018-07-31 |  |  |
| 18 | Sastanak sa komunalnom službom | 1d | 2018-07-25 | 2018-07-25 |  |  |
| 19 | Analiziranje konkretnog stanja | 3d | 2018-07-26 | 2018-07-30 | 18 |  |
| 20 | Pisanje lokalnog izveštaja | 1d | 2018-07-31 | 2018-07-31 | 19 |  |
| 21 | **Rad na terenu 2** | 5d | 2018-08-01 | 2018-08-07 | 17 |  |
| 22 | Sastanak sa komunalnom službom | 1d | 2018-08-01 | 2018-08-01 |  |  |
| 23 | Analiziranje konkretnog stanja | 3d | 2018-08-02 | 2018-08-06 | 22 |  |
| 24 | Pisanje lokalnog izveštaja | 1d | 2018-08-07 | 2018-08-07 | 23 |  |
| 25 | **Rad na terenu 3** | 5d | 2018-08-08 | 2018-08-14 | 21 |  |
| 26 | Sastanak sa komunalnom službom | 1d | 2018-08-08 | 2018-08-08 |  |  |
| 27 | Analiziranje konkretnog stanja | 3d | 2018-08-09 | 2018-08-13 | 26 |  |
| 28 | Pisanje lokalnog izveštaja | 1d | 2018-08-14 | 2018-08-14 | 27 |  |
| 29 | **Rad na terenu 4** | 5d | 2018-08-15 | 2018-08-21 | 25 |  |
| 30 | Sastanak sa komunalnom službom | 1d | 2018-08-15 | 2018-08-15 |  |  |
| 31 | Analiziranje konkretnog stanja | 3d | 2018-08-16 | 2018-08-20 | 30 |  |
| 32 | Pisanje lokalnog izveštaja | 1d | 2018-08-21 | 2018-08-21 | 31 |  |
| 33 | Sumiranje rezultata | 2d | 2018-08-22 | 2018-08-23 | 16 |  |
| 34 | **Monitoring I kontrola analize tržišta** | 44d | 2018-07-02 | 2018-08-30 |  |  |
| 35 | Uspostavljenje sistema za praćenje napretka | 5d | 2018-07-02 | 2018-07-06 |  |  |
| 36 | Praćenje napretka | 39d | 2018-07-09 | 2018-08-30 | 35 |  |
| 37 | Otkrivanje I rešavanje problema | 44d | 2018-07-02 | 2018-08-30 |  |  |
| 38 | **Izveštavanje o statusu analize** | 30.75d | 2018-07-06 | 2018-08-17 |  |  |
| 39 | Izveštavanje o statusu analize 1 | 1d | 2018-07-06 | 2018-07-06 |  | start no earlier than 2018-07-06 |
| 40 | Izveštavanje o statusu analize 2 | 1d | 2018-07-13 | 2018-07-13 |  | start no earlier than 2018-07-13 |
| 41 | Izveštavanje o statusu analize 3 | 1d | 2018-07-20 | 2018-07-20 |  | start no earlier than 2018-07-20 |
| 42 | Izveštavanje o statusu analize 4 | 1d | 2018-07-27 | 2018-07-27 |  | start no earlier than 2018-07-27 |
| 43 | Izveštavanje o statusu analize 5 | 1d | 2018-08-03 | 2018-08-03 |  | start no earlier than 2018-08-03 |
| 44 | Izveštavanje o statusu analize 6 | 1d | 2018-08-10 | 2018-08-10 |  | start no earlier than 2018-08-10 |
| 45 | Izveštavanje o statusu analize 7 | 1d | 2018-08-17 | 2018-08-17 |  | start no earlier than 2018-08-17 |
| 46 | **Zatvaranje analize tržišta** | 5d | 2018-07-02 | 2018-07-06 |  |  |
| 47 | Pisanje završnog izveštaja | 2d | 2018-07-02 | 2018-07-03 |  |  |
| 48 | Izvršavanje revizije kompletne analize | 1d | 2018-07-04 | 2018-07-04 | 47 |  |
| 49 | Dobijanje odobrenja od menadžera | 2d | 2018-07-05 | 2018-07-06 | 48 |  |
| 50 | **Analiza korisničkih zahteva** | 88d | 2018-07-02 | 2018-10-31 |  |  |
| 51 | **Iniciranje analize korisničkih zahteva** | 10d | 2018-07-02 | 2018-07-13 |  |  |
| 52 | Napisati one-page opis posla | 1d | 2018-07-02 | 2018-07-02 |  |  |
| 53 | Selekcija ljudi | 4d | 2018-07-03 | 2018-07-06 | 52 |  |
| 54 | Formiranje timova | 4d | 2018-07-09 | 2018-07-12 | 53 |  |
| 55 | Dobijanje odobrenja o validnosti timova | 1d | 2018-07-13 | 2018-07-13 | 54 |  |
| 56 | **Planiranje analize korisničkih zahteva** | 15d | 2018-07-02 | 2018-07-20 |  |  |
| 57 | Definisanje svih potrebnih aktivnosti faze | 5d | 2018-07-02 | 2018-07-06 |  |  |
| 58 | Dodeljivanje aktivnosti timovima | 3d | 2018-07-09 | 2018-07-11 | 57 |  |
| 59 | Priprema sistema za anketiranje | 5d | 2018-07-12 | 2018-07-18 | 58 |  |
| 60 | Priprema baza podataka za skladištenje rezultata anketa | 5d | 2018-07-12 | 2018-07-18 | 58 |  |
| 61 | Pisanje izveštaja o planu | 1d | 2018-07-19 | 2018-07-19 | 59, 60 |  |
| 62 | Dobijanje dozvole od višeg menadžmenta | 1d | 2018-07-20 | 2018-07-20 | 61 |  |
| 63 | **Izvršavanje analize korisničkih zahteva** | 53d | 2018-07-02 | 2018-09-12 |  |  |
| 64 | **Izvršavanje anketa** | 20d | 2018-07-02 | 2018-07-27 |  |  |
| 65 | Pisanje korisničkih anketa | 3d | 2018-07-02 | 2018-07-04 |  |  |
| 66 | Izvršavanje anketa | 12d | 2018-07-05 | 2018-07-20 | 65 |  |
| 67 | Analiziranje rezultata anketa | 4d | 2018-07-23 | 2018-07-26 | 66 |  |
| 68 | Dokumentovanje rezultata anketa | 1d | 2018-07-27 | 2018-07-27 | 67 |  |
| 69 | Izvršavanje intervjua | 20d | 2018-07-02 | 2018-07-27 |  |  |
| 70 | Organizacija tribina | 20d | 2018-07-02 | 2018-07-27 |  |  |
| 71 | Sumiranje rezultata | 3d | 2018-07-30 | 2018-08-01 | 64, 69, 70 |  |
| 72 | Pisanje slučajeva korišćenja | 18d | 2018-08-02 | 2018-08-27 | 71 |  |
| 73 | Kreiranje Requirements Breakdown Structure (RBS) dokumenta | 10d | 2018-08-28 | 2018-09-10 | 72 |  |
| 74 | Pisanje konačnog izveštaja | 2d | 2018-09-11 | 2018-09-12 | 73 |  |
| 75 | **Monitoring i kontrola analize korisničkih zahteva** | 88d | 2018-07-02 | 2018-10-31 |  |  |
| 76 | Uspostavljenje sistema za praćenje napretka | 8d | 2018-07-02 | 2018-07-11 |  |  |
| 77 | Praćenje napretka | 80d | 2018-07-12 | 2018-10-31 | 76 |  |
| 78 | Otkrivanje I rešavanje problema | 88d | 2018-07-02 | 2018-10-31 |  |  |
| 79 | **Izveštavanje o statusu analize** | 80.75d | 2018-07-06 | 2018-10-26 |  |  |
| 80 | Izveštavanje o statusu analize 1 | 1d | 2018-07-06 | 2018-07-06 |  | start no earlier than 2018-07-06 |
| 81 | Izveštavanje o statusu analize 2 | 1d | 2018-07-13 | 2018-07-13 |  | start no earlier than 2018-07-13 |
| 82 | Izveštavanje o statusu analize 3 | 1d | 2018-07-20 | 2018-07-20 |  | start no earlier than 2018-07-20 |
| 83 | Izveštavanje o statusu analize 4 | 1d | 2018-07-27 | 2018-07-27 |  | start no earlier than 2018-07-27 |
| 84 | Izveštavanje o statusu analize 5 | 1d | 2018-08-03 | 2018-08-03 |  | start no earlier than 2018-08-03 |
| 85 | Izveštavanje o statusu analize 6 | 1d | 2018-08-10 | 2018-08-10 |  | start no earlier than 2018-08-10 |
| 86 | Izveštavanje o statusu analize 7 | 1d | 2018-08-17 | 2018-08-17 |  | start no earlier than 2018-08-17 |
| 87 | Izveštavanje o statusu analize 8 | 1d | 2018-08-24 | 2018-08-24 |  | start no earlier than 2018-08-24 |
| 88 | Izveštavanje o statusu analize 9 | 1d | 2018-08-31 | 2018-08-31 |  | start no earlier than 2018-08-31 |
| 89 | Izveštavanje o statusu analize 10 | 1d | 2018-09-07 | 2018-09-07 |  | start no earlier than 2018-09-07 |
| 90 | Izveštavanje o statusu analize 11 | 1d | 2018-09-14 | 2018-09-14 |  | start no earlier than 2018-09-14 |
| 91 | Izveštavanje o statusu analize 12 | 1d | 2018-09-21 | 2018-09-21 |  | start no earlier than 2018-09-21 |
| 92 | Izveštavanje o statusu analize 13 | 1d | 2018-09-28 | 2018-09-28 |  | start no earlier than 2018-09-28 |
| 93 | Izveštavanje o statusu analize 14 | 1d | 2018-10-05 | 2018-10-05 |  | start no earlier than 2018-10-05 |
| 94 | Izveštavanje o statusu analize 15 | 1d | 2018-10-12 | 2018-10-12 |  | start no earlier than 2018-10-12 |
| 95 | Izveštavanje o statusu analize 16 | 1d | 2018-10-19 | 2018-10-19 |  | start no earlier than 2018-10-19 |
| 96 | Izveštavanje o statusu analize 17 | 1d | 2018-10-26 | 2018-10-26 |  | start no earlier than 2018-10-26 |
| 97 | **Zatvaranje analize korisničkih zahteva** | 10d | 2018-07-02 | 2018-07-13 |  |  |
| 98 | Pisanje završnog izveštaja | 4d | 2018-07-02 | 2018-07-05 |  |  |
| 99 | Izvršavanje revizije kompletne analize | 4d | 2018-07-06 | 2018-07-11 | 98 |  |
| 100 | Dobijanje odobrenja od menadžera | 2d | 2018-07-12 | 2018-07-13 | 99 |  |
| 192 | **Nedeljni sastanak - video konferencija** | 779d | 2018-07-02 | 2021-06-30 |  |  |
| 193 | Nedeljni sastanak - video konferencija 1 | 1d | 2018-07-03 | 2018-07-03 |  | start no earlier than 2018-07-03 |
| 194 | Nedeljni sastanak - video konferencija 2 | 1d | 2018-07-10 | 2018-07-10 |  | start no earlier than 2018-07-10 |
| 195 | Nedeljni sastanak - video konferencija 3 | 1d | 2018-07-17 | 2018-07-17 |  | start no earlier than 2018-07-17 |
| 196 | Nedeljni sastanak - video konferencija 4 | 1d | 2018-07-24 | 2018-07-24 |  | start no earlier than 2018-07-24 |
| 197 | Nedeljni sastanak - video konferencija 5 | 1d | 2018-07-31 | 2018-07-31 |  | start no earlier than 2018-07-31 |
| 198 | Nedeljni sastanak - video konferencija 6 | 1d | 2018-08-07 | 2018-08-07 |  | start no earlier than 2018-08-07 |
| 199 | Nedeljni sastanak - video konferencija 7 | 1d | 2018-08-14 | 2018-08-14 |  | start no earlier than 2018-08-14 |
| 200 | Nedeljni sastanak - video konferencija 8 | 1d | 2018-08-21 | 2018-08-21 |  | start no earlier than 2018-08-21 |
| 201 | Nedeljni sastanak - video konferencija 9 | 1d | 2018-08-28 | 2018-08-28 |  | start no earlier than 2018-08-28 |
| 202 | Nedeljni sastanak - video konferencija 10 | 1d | 2018-09-04 | 2018-09-04 |  | start no earlier than 2018-09-04 |
| 203 | Nedeljni sastanak - video konferencija 11 | 1d | 2018-09-11 | 2018-09-11 |  | start no earlier than 2018-09-11 |
| 204 | Nedeljni sastanak - video konferencija 12 | 1d | 2018-09-18 | 2018-09-18 |  | start no earlier than 2018-09-18 |
| 205 | Nedeljni sastanak - video konferencija 13 | 1d | 2018-09-25 | 2018-09-25 |  | start no earlier than 2018-09-25 |
| 206 | Nedeljni sastanak - video konferencija 14 | 1d | 2018-10-02 | 2018-10-02 |  | start no earlier than 2018-10-02 |
| 207 | Nedeljni sastanak - video konferencija 15 | 1d | 2018-10-09 | 2018-10-09 |  | start no earlier than 2018-10-09 |
| 208 | Nedeljni sastanak - video konferencija 16 | 1d | 2018-10-16 | 2018-10-16 |  | start no earlier than 2018-10-16 |
| 209 | Nedeljni sastanak - video konferencija 17 | 1d | 2018-10-23 | 2018-10-23 |  | start no earlier than 2018-10-23 |
| 210 | Nedeljni sastanak - video konferencija 18 | 1d | 2018-10-30 | 2018-10-30 |  | start no earlier than 2018-10-30 |
| 211 | Nedeljni sastanak - video konferencija 19 | 1d | 2018-11-06 | 2018-11-06 |  | start no earlier than 2018-11-06 |
| 212 | Nedeljni sastanak - video konferencija 20 | 1d | 2018-11-13 | 2018-11-13 |  | start no earlier than 2018-11-13 |
| 213 | Nedeljni sastanak - video konferencija 21 | 1d | 2018-11-20 | 2018-11-20 |  | start no earlier than 2018-11-20 |
| 214 | Nedeljni sastanak - video konferencija 22 | 1d | 2018-11-27 | 2018-11-27 |  | start no earlier than 2018-11-27 |
| 215 | Nedeljni sastanak - video konferencija 23 | 1d | 2018-12-04 | 2018-12-04 |  | start no earlier than 2018-12-04 |
| 216 | Nedeljni sastanak - video konferencija 24 | 1d | 2018-12-11 | 2018-12-11 |  | start no earlier than 2018-12-11 |
| 217 | Nedeljni sastanak - video konferencija 25 | 1d | 2018-12-18 | 2018-12-18 |  | start no earlier than 2018-12-18 |
| 218 | Nedeljni sastanak - video konferencija 26 | 1d | 2018-12-25 | 2018-12-25 |  | start no earlier than 2018-12-25 |
| 219 | Nedeljni sastanak - video konferencija 27 | 1d | 2019-01-01 | 2019-01-01 |  | start no earlier than 2019-01-01 |
| 220 | Nedeljni sastanak - video konferencija 28 | 1d | 2019-01-08 | 2019-01-08 |  | start no earlier than 2019-01-08 |
| 221 | Nedeljni sastanak - video konferencija 29 | 1d | 2019-01-15 | 2019-01-15 |  | start no earlier than 2019-01-15 |
| 222 | Nedeljni sastanak - video konferencija 30 | 1d | 2019-01-22 | 2019-01-22 |  | start no earlier than 2019-01-22 |
| 223 | Nedeljni sastanak - video konferencija 31 | 1d | 2019-01-29 | 2019-01-29 |  | start no earlier than 2019-01-29 |
| 224 | Nedeljni sastanak - video konferencija 32 | 1d | 2019-02-05 | 2019-02-05 |  | start no earlier than 2019-02-05 |
| 225 | Nedeljni sastanak - video konferencija 33 | 1d | 2019-02-12 | 2019-02-12 |  | start no earlier than 2019-02-12 |
| 226 | Nedeljni sastanak - video konferencija 34 | 1d | 2019-02-19 | 2019-02-19 |  | start no earlier than 2019-02-19 |
| 227 | Nedeljni sastanak - video konferencija 35 | 1d | 2019-02-26 | 2019-02-26 |  | start no earlier than 2019-02-26 |
| 228 | Nedeljni sastanak - video konferencija 36 | 1d | 2019-03-05 | 2019-03-05 |  | start no earlier than 2019-03-05 |
| 229 | Nedeljni sastanak - video konferencija 37 | 1d | 2019-03-12 | 2019-03-12 |  | start no earlier than 2019-03-12 |
| 230 | Nedeljni sastanak - video konferencija 38 | 1d | 2019-03-19 | 2019-03-19 |  | start no earlier than 2019-03-19 |
| 231 | Nedeljni sastanak - video konferencija 39 | 1d | 2019-03-26 | 2019-03-26 |  | start no earlier than 2019-03-26 |
| 232 | Nedeljni sastanak - video konferencija 40 | 1d | 2019-04-02 | 2019-04-02 |  | start no earlier than 2019-04-02 |
| 233 | Nedeljni sastanak - video konferencija 41 | 1d | 2019-04-09 | 2019-04-09 |  | start no earlier than 2019-04-09 |
| 234 | Nedeljni sastanak - video konferencija 42 | 1d | 2019-04-16 | 2019-04-16 |  | start no earlier than 2019-04-16 |
| 235 | Nedeljni sastanak - video konferencija 43 | 1d | 2019-04-23 | 2019-04-23 |  | start no earlier than 2019-04-23 |
| 236 | Nedeljni sastanak - video konferencija 44 | 1d | 2019-04-30 | 2019-04-30 |  | start no earlier than 2019-04-30 |
| 237 | Nedeljni sastanak - video konferencija 45 | 1d | 2019-05-07 | 2019-05-07 |  | start no earlier than 2019-05-07 |
| 238 | Nedeljni sastanak - video konferencija 46 | 1d | 2019-05-14 | 2019-05-14 |  | start no earlier than 2019-05-14 |
| 239 | Nedeljni sastanak - video konferencija 47 | 1d | 2019-05-21 | 2019-05-21 |  | start no earlier than 2019-05-21 |
| 240 | Nedeljni sastanak - video konferencija 48 | 1d | 2019-05-28 | 2019-05-28 |  | start no earlier than 2019-05-28 |
| 241 | Nedeljni sastanak - video konferencija 49 | 1d | 2019-06-04 | 2019-06-04 |  | start no earlier than 2019-06-04 |
| 242 | Nedeljni sastanak - video konferencija 50 | 1d | 2019-06-11 | 2019-06-11 |  | start no earlier than 2019-06-11 |
| 243 | Nedeljni sastanak - video konferencija 51 | 1d | 2019-06-18 | 2019-06-18 |  | start no earlier than 2019-06-18 |
| 244 | Nedeljni sastanak - video konferencija 52 | 1d | 2019-06-25 | 2019-06-25 |  | start no earlier than 2019-06-25 |
| 245 | Nedeljni sastanak - video konferencija 53 | 1d | 2019-07-02 | 2019-07-02 |  | start no earlier than 2019-07-02 |
| 246 | Nedeljni sastanak - video konferencija 54 | 1d | 2019-07-09 | 2019-07-09 |  | start no earlier than 2019-07-09 |
| 247 | Nedeljni sastanak - video konferencija 55 | 1d | 2019-07-16 | 2019-07-16 |  | start no earlier than 2019-07-16 |
| 248 | Nedeljni sastanak - video konferencija 56 | 1d | 2019-07-23 | 2019-07-23 |  | start no earlier than 2019-07-23 |
| 249 | Nedeljni sastanak - video konferencija 57 | 1d | 2019-07-30 | 2019-07-30 |  | start no earlier than 2019-07-30 |
| 250 | Nedeljni sastanak - video konferencija 58 | 1d | 2019-08-06 | 2019-08-06 |  | start no earlier than 2019-08-06 |
| 251 | Nedeljni sastanak - video konferencija 59 | 1d | 2019-08-13 | 2019-08-13 |  | start no earlier than 2019-08-13 |
| 252 | Nedeljni sastanak - video konferencija 60 | 1d | 2019-08-20 | 2019-08-20 |  | start no earlier than 2019-08-20 |
| 253 | Nedeljni sastanak - video konferencija 61 | 1d | 2019-08-27 | 2019-08-27 |  | start no earlier than 2019-08-27 |
| 254 | Nedeljni sastanak - video konferencija 62 | 1d | 2019-09-03 | 2019-09-03 |  | start no earlier than 2019-09-03 |
| 255 | Nedeljni sastanak - video konferencija 63 | 1d | 2019-09-10 | 2019-09-10 |  | start no earlier than 2019-09-10 |
| 256 | Nedeljni sastanak - video konferencija 64 | 1d | 2019-09-17 | 2019-09-17 |  | start no earlier than 2019-09-17 |
| 257 | Nedeljni sastanak - video konferencija 65 | 1d | 2019-09-24 | 2019-09-24 |  | start no earlier than 2019-09-24 |
| 258 | Nedeljni sastanak - video konferencija 66 | 1d | 2019-10-01 | 2019-10-01 |  | start no earlier than 2019-10-01 |
| 259 | Nedeljni sastanak - video konferencija 67 | 1d | 2019-10-08 | 2019-10-08 |  | start no earlier than 2019-10-08 |
| 260 | Nedeljni sastanak - video konferencija 68 | 1d | 2019-10-15 | 2019-10-15 |  | start no earlier than 2019-10-15 |
| 261 | Nedeljni sastanak - video konferencija 69 | 1d | 2019-10-22 | 2019-10-22 |  | start no earlier than 2019-10-22 |
| 262 | Nedeljni sastanak - video konferencija 70 | 1d | 2019-10-29 | 2019-10-29 |  | start no earlier than 2019-10-29 |
| 263 | Nedeljni sastanak - video konferencija 71 | 1d | 2019-11-05 | 2019-11-05 |  | start no earlier than 2019-11-05 |
| 264 | Nedeljni sastanak - video konferencija 72 | 1d | 2019-11-12 | 2019-11-12 |  | start no earlier than 2019-11-12 |
| 265 | Nedeljni sastanak - video konferencija 73 | 1d | 2019-11-19 | 2019-11-19 |  | start no earlier than 2019-11-19 |
| 266 | Nedeljni sastanak - video konferencija 74 | 1d | 2019-11-26 | 2019-11-26 |  | start no earlier than 2019-11-26 |
| 267 | Nedeljni sastanak - video konferencija 75 | 1d | 2019-12-03 | 2019-12-03 |  | start no earlier than 2019-12-03 |
| 268 | Nedeljni sastanak - video konferencija 76 | 1d | 2019-12-10 | 2019-12-10 |  | start no earlier than 2019-12-10 |
| 269 | Nedeljni sastanak - video konferencija 77 | 1d | 2019-12-17 | 2019-12-17 |  | start no earlier than 2019-12-17 |
| 270 | Nedeljni sastanak - video konferencija 78 | 1d | 2019-12-24 | 2019-12-24 |  | start no earlier than 2019-12-24 |
| 271 | Nedeljni sastanak - video konferencija 79 | 1d | 2019-12-31 | 2019-12-31 |  | start no earlier than 2019-12-31 |
| 272 | Nedeljni sastanak - video konferencija 80 | 1d | 2020-01-07 | 2020-01-07 |  | start no earlier than 2020-01-07 |
| 273 | Nedeljni sastanak - video konferencija 81 | 1d | 2020-01-14 | 2020-01-14 |  | start no earlier than 2020-01-14 |
| 274 | Nedeljni sastanak - video konferencija 82 | 1d | 2020-01-21 | 2020-01-21 |  | start no earlier than 2020-01-21 |
| 275 | Nedeljni sastanak - video konferencija 83 | 1d | 2020-01-28 | 2020-01-28 |  | start no earlier than 2020-01-28 |
| 276 | Nedeljni sastanak - video konferencija 84 | 1d | 2020-02-04 | 2020-02-04 |  | start no earlier than 2020-02-04 |
| 277 | Nedeljni sastanak - video konferencija 85 | 1d | 2020-02-11 | 2020-02-11 |  | start no earlier than 2020-02-11 |
| 278 | Nedeljni sastanak - video konferencija 86 | 1d | 2020-02-18 | 2020-02-18 |  | start no earlier than 2020-02-18 |
| 279 | Nedeljni sastanak - video konferencija 87 | 1d | 2020-02-25 | 2020-02-25 |  | start no earlier than 2020-02-25 |
| 280 | Nedeljni sastanak - video konferencija 88 | 1d | 2020-03-03 | 2020-03-03 |  | start no earlier than 2020-03-03 |
| 281 | Nedeljni sastanak - video konferencija 89 | 1d | 2020-03-10 | 2020-03-10 |  | start no earlier than 2020-03-10 |
| 282 | Nedeljni sastanak - video konferencija 90 | 1d | 2020-03-17 | 2020-03-17 |  | start no earlier than 2020-03-17 |
| 283 | Nedeljni sastanak - video konferencija 91 | 1d | 2020-03-24 | 2020-03-24 |  | start no earlier than 2020-03-24 |
| 284 | Nedeljni sastanak - video konferencija 92 | 1d | 2020-03-31 | 2020-03-31 |  | start no earlier than 2020-03-31 |
| 285 | Nedeljni sastanak - video konferencija 93 | 1d | 2020-04-07 | 2020-04-07 |  | start no earlier than 2020-04-07 |
| 286 | Nedeljni sastanak - video konferencija 94 | 1d | 2020-04-14 | 2020-04-14 |  | start no earlier than 2020-04-14 |
| 287 | Nedeljni sastanak - video konferencija 95 | 1d | 2020-04-21 | 2020-04-21 |  | start no earlier than 2020-04-21 |
| 288 | Nedeljni sastanak - video konferencija 96 | 1d | 2020-04-28 | 2020-04-28 |  | start no earlier than 2020-04-28 |
| 289 | Nedeljni sastanak - video konferencija 97 | 1d | 2020-05-05 | 2020-05-05 |  | start no earlier than 2020-05-05 |
| 290 | Nedeljni sastanak - video konferencija 98 | 1d | 2020-05-12 | 2020-05-12 |  | start no earlier than 2020-05-12 |
| 291 | Nedeljni sastanak - video konferencija 99 | 1d | 2020-05-19 | 2020-05-19 |  | start no earlier than 2020-05-19 |
| 292 | Nedeljni sastanak - video konferencija 100 | 1d | 2020-05-26 | 2020-05-26 |  | start no earlier than 2020-05-26 |
| 293 | Nedeljni sastanak - video konferencija 101 | 1d | 2020-06-02 | 2020-06-02 |  | start no earlier than 2020-06-02 |
| 294 | Nedeljni sastanak - video konferencija 102 | 1d | 2020-06-09 | 2020-06-09 |  | start no earlier than 2020-06-09 |
| 295 | Nedeljni sastanak - video konferencija 103 | 1d | 2020-06-16 | 2020-06-16 |  | start no earlier than 2020-06-16 |
| 296 | Nedeljni sastanak - video konferencija 104 | 1d | 2020-06-23 | 2020-06-23 |  | start no earlier than 2020-06-23 |
| 297 | Nedeljni sastanak - video konferencija 105 | 1d | 2020-06-30 | 2020-06-30 |  | start no earlier than 2020-06-30 |
| 298 | Nedeljni sastanak - video konferencija 106 | 1d | 2020-07-07 | 2020-07-07 |  | start no earlier than 2020-07-07 |
| 299 | Nedeljni sastanak - video konferencija 107 | 1d | 2020-07-14 | 2020-07-14 |  | start no earlier than 2020-07-14 |
| 300 | Nedeljni sastanak - video konferencija 108 | 1d | 2020-07-21 | 2020-07-21 |  | start no earlier than 2020-07-21 |
| 301 | Nedeljni sastanak - video konferencija 109 | 1d | 2020-07-28 | 2020-07-28 |  | start no earlier than 2020-07-28 |
| 302 | Nedeljni sastanak - video konferencija 110 | 1d | 2020-08-04 | 2020-08-04 |  | start no earlier than 2020-08-04 |
| 303 | Nedeljni sastanak - video konferencija 111 | 1d | 2020-08-11 | 2020-08-11 |  | start no earlier than 2020-08-11 |
| 304 | Nedeljni sastanak - video konferencija 112 | 1d | 2020-08-18 | 2020-08-18 |  | start no earlier than 2020-08-18 |
| 305 | Nedeljni sastanak - video konferencija 113 | 1d | 2020-08-25 | 2020-08-25 |  | start no earlier than 2020-08-25 |
| 306 | Nedeljni sastanak - video konferencija 114 | 1d | 2020-09-01 | 2020-09-01 |  | start no earlier than 2020-09-01 |
| 307 | Nedeljni sastanak - video konferencija 115 | 1d | 2020-09-08 | 2020-09-08 |  | start no earlier than 2020-09-08 |
| 308 | Nedeljni sastanak - video konferencija 116 | 1d | 2020-09-15 | 2020-09-15 |  | start no earlier than 2020-09-15 |
| 309 | Nedeljni sastanak - video konferencija 117 | 1d | 2020-09-22 | 2020-09-22 |  | start no earlier than 2020-09-22 |
| 310 | Nedeljni sastanak - video konferencija 118 | 1d | 2020-09-29 | 2020-09-29 |  | start no earlier than 2020-09-29 |
| 311 | Nedeljni sastanak - video konferencija 119 | 1d | 2020-10-06 | 2020-10-06 |  | start no earlier than 2020-10-06 |
| 312 | Nedeljni sastanak - video konferencija 120 | 1d | 2020-10-13 | 2020-10-13 |  | start no earlier than 2020-10-13 |
| 313 | Nedeljni sastanak - video konferencija 121 | 1d | 2020-10-20 | 2020-10-20 |  | start no earlier than 2020-10-20 |
| 314 | Nedeljni sastanak - video konferencija 122 | 1d | 2020-10-27 | 2020-10-27 |  | start no earlier than 2020-10-27 |
| 315 | Nedeljni sastanak - video konferencija 123 | 1d | 2020-11-03 | 2020-11-03 |  | start no earlier than 2020-11-03 |
| 316 | Nedeljni sastanak - video konferencija 124 | 1d | 2020-11-10 | 2020-11-10 |  | start no earlier than 2020-11-10 |
| 317 | Nedeljni sastanak - video konferencija 125 | 1d | 2020-11-17 | 2020-11-17 |  | start no earlier than 2020-11-17 |
| 318 | Nedeljni sastanak - video konferencija 126 | 1d | 2020-11-24 | 2020-11-24 |  | start no earlier than 2020-11-24 |
| 319 | Nedeljni sastanak - video konferencija 127 | 1d | 2020-12-01 | 2020-12-01 |  | start no earlier than 2020-12-01 |
| 320 | Nedeljni sastanak - video konferencija 128 | 1d | 2020-12-08 | 2020-12-08 |  | start no earlier than 2020-12-08 |
| 321 | Nedeljni sastanak - video konferencija 129 | 1d | 2020-12-15 | 2020-12-15 |  | start no earlier than 2020-12-15 |
| 322 | Nedeljni sastanak - video konferencija 130 | 1d | 2020-12-22 | 2020-12-22 |  | start no earlier than 2020-12-22 |
| 323 | Nedeljni sastanak - video konferencija 131 | 1d | 2020-12-29 | 2020-12-29 |  | start no earlier than 2020-12-29 |
| 324 | Nedeljni sastanak - video konferencija 132 | 1d | 2021-01-05 | 2021-01-05 |  | start no earlier than 2021-01-05 |
| 325 | Nedeljni sastanak - video konferencija 133 | 1d | 2021-01-12 | 2021-01-12 |  | start no earlier than 2021-01-12 |
| 326 | Nedeljni sastanak - video konferencija 134 | 1d | 2021-01-19 | 2021-01-19 |  | start no earlier than 2021-01-19 |
| 327 | Nedeljni sastanak - video konferencija 135 | 1d | 2021-01-26 | 2021-01-26 |  | start no earlier than 2021-01-26 |
| 328 | Nedeljni sastanak - video konferencija 136 | 1d | 2021-02-02 | 2021-02-02 |  | start no earlier than 2021-02-02 |
| 329 | Nedeljni sastanak - video konferencija 137 | 1d | 2021-02-09 | 2021-02-09 |  | start no earlier than 2021-02-09 |
| 330 | Nedeljni sastanak - video konferencija 138 | 1d | 2021-02-16 | 2021-02-16 |  | start no earlier than 2021-02-16 |
| 331 | Nedeljni sastanak - video konferencija 139 | 1d | 2021-02-23 | 2021-02-23 |  | start no earlier than 2021-02-23 |
| 332 | Nedeljni sastanak - video konferencija 140 | 1d | 2021-03-02 | 2021-03-02 |  | start no earlier than 2021-03-02 |
| 333 | Nedeljni sastanak - video konferencija 141 | 1d | 2021-03-09 | 2021-03-09 |  | start no earlier than 2021-03-09 |
| 334 | Nedeljni sastanak - video konferencija 142 | 1d | 2021-03-16 | 2021-03-16 |  | start no earlier than 2021-03-16 |
| 335 | Nedeljni sastanak - video konferencija 143 | 1d | 2021-03-23 | 2021-03-23 |  | start no earlier than 2021-03-23 |
| 336 | Nedeljni sastanak - video konferencija 144 | 1d | 2021-03-30 | 2021-03-30 |  | start no earlier than 2021-03-30 |
| 337 | Nedeljni sastanak - video konferencija 145 | 1d | 2021-04-06 | 2021-04-06 |  | start no earlier than 2021-04-06 |
| 338 | Nedeljni sastanak - video konferencija 146 | 1d | 2021-04-13 | 2021-04-13 |  | start no earlier than 2021-04-13 |
| 339 | Nedeljni sastanak - video konferencija 147 | 1d | 2021-04-20 | 2021-04-20 |  | start no earlier than 2021-04-20 |
| 340 | Nedeljni sastanak - video konferencija 148 | 1d | 2021-04-27 | 2021-04-27 |  | start no earlier than 2021-04-27 |
| 341 | Nedeljni sastanak - video konferencija 149 | 1d | 2021-05-04 | 2021-05-04 |  | start no earlier than 2021-05-04 |
| 342 | Nedeljni sastanak - video konferencija 150 | 1d | 2021-05-11 | 2021-05-11 |  | start no earlier than 2021-05-11 |
| 343 | Nedeljni sastanak - video konferencija 151 | 1d | 2021-05-18 | 2021-05-18 |  | start no earlier than 2021-05-18 |
| 344 | Nedeljni sastanak - video konferencija 152 | 1d | 2021-05-25 | 2021-05-25 |  | start no earlier than 2021-05-25 |
| 345 | Nedeljni sastanak - video konferencija 153 | 1d | 2021-06-01 | 2021-06-01 |  | start no earlier than 2021-06-01 |
| 346 | Nedeljni sastanak - video konferencija 154 | 1d | 2021-06-08 | 2021-06-08 |  | start no earlier than 2021-06-08 |
| 347 | Nedeljni sastanak - video konferencija 155 | 1d | 2021-06-15 | 2021-06-15 |  | start no earlier than 2021-06-15 |
| 348 | Nedeljni sastanak - video konferencija 156 | 1d | 2021-06-22 | 2021-06-22 |  | start no earlier than 2021-06-22 |
| 349 | Nedeljni sastanak - video konferencija 157 | 1d | 2021-06-29 | 2021-06-29 |  | start no earlier than 2021-06-29 |

Removed: 93 Nedeljni sastanak - video konferencija

Changed:

| ID | Task | Start | Finish | Duration | Total float | Predecessors | Other |
| --- | --- | --- | --- | --- | --- | --- | --- |
| 1 | **WP1 - Analiza tržišta i korisničkih zahteva** |  |  |  |  |  | constraint finish no earlier than 2018-10-31 → none |
| 103 | Planiranje budžeta |  |  |  |  |  | resources none → BMU - Menadžeri [50%]; ETF - Menadžeri [50%] |
| 188 | Minimalizacija budžeta |  | 2018-07-02 → 2018-12-14 (+165d) | 1d? → 120d | none → 0d |  |  |
| 189 | Minimalizacija rizika |  | 2018-07-02 → 2021-06-30 (+1094d) | 1d? → 779d | none → 0d |  |  |
| 190 | Minimalizacija iskorišćenja resursa | 2018-07-02 → 2018-12-17 (+168d) | 2018-07-02 → 2020-02-12 (+590d) | 1d? → 300d | none → 0d | none → 188 |  |
| 350 | Dorada MS Project fajla |  | 2018-07-02 → 2021-06-30 (+1094d) | 1d? → 779d | none → 0d |  |  |
| 351 | Upravljanje merama kvailteta i postupcima | 2018-07-02 → 2020-02-13 (+591d) | 2018-07-02 → 2021-06-30 (+1094d) | 1d? → 359d | none → 0d | none → 190 |  |
| 352 | Upravljanje načinom komunikacije |  | 2018-07-02 → 2018-11-16 (+137d) | 1d? → 100d | none → 679d |  |  |

## Version 4 (saved 2018-06-05)

Note of the change: Updated MS Project file

Last finish stays 2021-07-01.

Added:

| ID | Task | Duration | Start | Finish | Constraint | Resources |
| --- | --- | --- | --- | --- | --- | --- |
| 187 | **Rukovođenje projektom** | 757.75d | 2018-07-03 | 2021-06-02 |  |  |
| 188 | Rukovođenje projektom 1 | 1d | 2018-07-03 | 2018-07-03 | start no earlier than 2018-07-03 | BMU - Menadzer1; BMU - Menadzer2 |
| 189 | Rukovođenje projektom 2 | 1d | 2018-08-02 | 2018-08-02 | start no earlier than 2018-08-02 | BMU - Menadzer1; BMU - Menadzer2 |
| 190 | Rukovođenje projektom 3 | 1d | 2018-09-04 | 2018-09-04 | start no earlier than 2018-09-04 | BMU - Menadzer1; BMU - Menadzer2 |
| 191 | Rukovođenje projektom 4 | 1d | 2018-10-02 | 2018-10-02 | start no earlier than 2018-10-02 | BMU - Menadzer1; BMU - Menadzer2 |
| 192 | Rukovođenje projektom 5 | 1d | 2018-11-02 | 2018-11-02 | start no earlier than 2018-11-02 | BMU - Menadzer1; BMU - Menadzer2 |
| 193 | Rukovođenje projektom 6 | 1d | 2018-12-04 | 2018-12-04 | start no earlier than 2018-12-04 | BMU - Menadzer1; BMU - Menadzer2 |
| 194 | Rukovođenje projektom 7 | 1d | 2019-01-02 | 2019-01-02 | start no earlier than 2019-01-02 | BMU - Menadzer1; BMU - Menadzer2 |
| 195 | Rukovođenje projektom 8 | 1d | 2019-02-05 | 2019-02-05 | start no earlier than 2019-02-05 | BMU - Menadzer1; BMU - Menadzer2 |
| 196 | Rukovođenje projektom 9 | 1d | 2019-03-05 | 2019-03-05 | start no earlier than 2019-03-05 | BMU - Menadzer1; BMU - Menadzer2 |
| 197 | Rukovođenje projektom 10 | 1d | 2019-04-02 | 2019-04-02 | start no earlier than 2019-04-02 | BMU - Menadzer1; BMU - Menadzer2 |
| 198 | Rukovođenje projektom 11 | 1d | 2019-05-02 | 2019-05-02 | start no earlier than 2019-05-02 | BMU - Menadzer1; BMU - Menadzer2 |
| 199 | Rukovođenje projektom 12 | 1d | 2019-06-04 | 2019-06-04 | start no earlier than 2019-06-04 | BMU - Menadzer1; BMU - Menadzer2 |
| 200 | Rukovođenje projektom 13 | 1d | 2019-07-02 | 2019-07-02 | start no earlier than 2019-07-02 | BMU - Menadzer1; BMU - Menadzer2 |
| 201 | Rukovođenje projektom 14 | 1d | 2019-08-02 | 2019-08-02 | start no earlier than 2019-08-02 | BMU - Menadzer1; BMU - Menadzer2 |
| 202 | Rukovođenje projektom 15 | 1d | 2019-09-03 | 2019-09-03 | start no earlier than 2019-09-03 | BMU - Menadzer1; BMU - Menadzer2 |
| 203 | Rukovođenje projektom 16 | 1d | 2019-10-02 | 2019-10-02 | start no earlier than 2019-10-02 | BMU - Menadzer1; BMU - Menadzer2 |
| 204 | Rukovođenje projektom 17 | 1d | 2019-11-05 | 2019-11-05 | start no earlier than 2019-11-05 | BMU - Menadzer1; BMU - Menadzer2 |
| 205 | Rukovođenje projektom 18 | 1d | 2019-12-03 | 2019-12-03 | start no earlier than 2019-12-03 | BMU - Menadzer1; BMU - Menadzer2 |
| 206 | Rukovođenje projektom 19 | 1d | 2020-01-02 | 2020-01-02 | start no earlier than 2020-01-02 | BMU - Menadzer1; BMU - Menadzer2 |
| 207 | Rukovođenje projektom 20 | 1d | 2020-02-04 | 2020-02-04 | start no earlier than 2020-02-04 | BMU - Menadzer1; BMU - Menadzer2 |
| 208 | Rukovođenje projektom 21 | 1d | 2020-03-03 | 2020-03-03 | start no earlier than 2020-03-03 | BMU - Menadzer1; BMU - Menadzer2 |
| 209 | Rukovođenje projektom 22 | 1d | 2020-04-02 | 2020-04-02 | start no earlier than 2020-04-02 | BMU - Menadzer1; BMU - Menadzer2 |
| 210 | Rukovođenje projektom 23 | 1d | 2020-05-05 | 2020-05-05 | start no earlier than 2020-05-05 | BMU - Menadzer1; BMU - Menadzer2 |
| 211 | Rukovođenje projektom 24 | 1d | 2020-06-02 | 2020-06-02 | start no earlier than 2020-06-02 | BMU - Menadzer1; BMU - Menadzer2 |
| 212 | Rukovođenje projektom 25 | 1d | 2020-07-02 | 2020-07-02 | start no earlier than 2020-07-02 | BMU - Menadzer1; BMU - Menadzer2 |
| 213 | Rukovođenje projektom 26 | 1d | 2020-08-04 | 2020-08-04 | start no earlier than 2020-08-04 | BMU - Menadzer1; BMU - Menadzer2 |
| 214 | Rukovođenje projektom 27 | 1d | 2020-09-02 | 2020-09-02 | start no earlier than 2020-09-02 | BMU - Menadzer1; BMU - Menadzer2 |
| 215 | Rukovođenje projektom 28 | 1d | 2020-10-02 | 2020-10-02 | start no earlier than 2020-10-02 | BMU - Menadzer3 |
| 216 | Rukovođenje projektom 29 | 1d | 2020-11-03 | 2020-11-03 | start no earlier than 2020-11-03 | BMU - Menadzer3 |
| 217 | Rukovođenje projektom 30 | 1d | 2020-12-02 | 2020-12-02 | start no earlier than 2020-12-02 | BMU - Menadzer3 |
| 218 | Rukovođenje projektom 31 | 1d | 2021-01-05 | 2021-01-05 | start no earlier than 2021-01-05 | BMU - Menadzer3 |
| 219 | Rukovođenje projektom 32 | 1d | 2021-02-02 | 2021-02-02 | start no earlier than 2021-02-02 | BMU - Menadzer3 |
| 220 | Rukovođenje projektom 33 | 1d | 2021-03-02 | 2021-03-02 | start no earlier than 2021-03-02 | BMU - Menadzer1; BMU - Menadzer2 |
| 221 | Rukovođenje projektom 34 | 1d | 2021-04-02 | 2021-04-02 | start no earlier than 2021-04-02 | BMU - Menadzer1; BMU - Menadzer2 |
| 222 | Rukovođenje projektom 35 | 1d | 2021-05-04 | 2021-05-04 | start no earlier than 2021-05-04 | BMU - Menadzer1; BMU - Menadzer2 |
| 223 | Rukovođenje projektom 36 | 1d | 2021-06-02 | 2021-06-02 | start no earlier than 2021-06-02 | BMU - Menadzer1; BMU - Menadzer2 |
| 225 | **Minimalizacija rizika** | 759d | 2018-07-03 | 2021-06-03 |  |  |
| 226 | Minimalizacija rizika 1 | 1d | 2018-07-03 | 2018-07-03 | start no earlier than 2018-07-03 | BMU - Tehničar2 [50%]; BMU - Tehničar3 [50%] |
| 227 | Minimalizacija rizika 2 | 1d | 2018-08-03 | 2018-08-03 | start no earlier than 2018-08-03 | BMU - Tehničar2 [50%]; BMU - Tehničar3 [50%] |
| 228 | Minimalizacija rizika 3 | 1d | 2018-09-03 | 2018-09-03 | start no earlier than 2018-09-03 | BMU - Tehničar2 [50%]; BMU - Tehničar3 [50%] |
| 229 | Minimalizacija rizika 4 | 1d | 2018-10-03 | 2018-10-03 | start no earlier than 2018-10-03 | BMU - Tehničar2 [50%]; BMU - Tehničar3 [50%] |
| 230 | Minimalizacija rizika 5 | 1d | 2018-11-05 | 2018-11-05 | start no earlier than 2018-11-05 | BMU - Tehničar2 [50%]; BMU - Tehničar3 [50%] |
| 231 | Minimalizacija rizika 6 | 1d | 2018-12-03 | 2018-12-03 | start no earlier than 2018-12-03 | BMU - Tehničar2 [50%]; BMU - Tehničar3 [50%] |
| 232 | Minimalizacija rizika 7 | 1d | 2019-01-03 | 2019-01-03 | start no earlier than 2019-01-03 | BMU - Tehničar2 [50%]; BMU - Tehničar3 [50%] |
| 233 | Minimalizacija rizika 8 | 1d | 2019-02-04 | 2019-02-04 | start no earlier than 2019-02-04 | BMU - Tehničar2 [50%]; BMU - Tehničar3 [50%] |
| 234 | Minimalizacija rizika 9 | 1d | 2019-03-04 | 2019-03-04 | start no earlier than 2019-03-04 | BMU - Tehničar2 [50%]; BMU - Tehničar3 [50%] |
| 235 | Minimalizacija rizika 10 | 1d | 2019-04-03 | 2019-04-03 | start no earlier than 2019-04-03 | BMU - Tehničar2 [50%]; BMU - Tehničar3 [50%] |
| 236 | Minimalizacija rizika 11 | 1d | 2019-05-03 | 2019-05-03 | start no earlier than 2019-05-03 | BMU - Tehničar2 [50%]; BMU - Tehničar3 [50%] |
| 237 | Minimalizacija rizika 12 | 1d | 2019-06-03 | 2019-06-03 | start no earlier than 2019-06-03 | BMU - Tehničar2 [50%]; BMU - Tehničar3 [50%] |
| 238 | Minimalizacija rizika 13 | 1d | 2019-07-03 | 2019-07-03 | start no earlier than 2019-07-03 | BMU - Tehničar2 [50%]; BMU - Tehničar3 [50%] |
| 239 | Minimalizacija rizika 14 | 1d | 2019-08-05 | 2019-08-05 | start no earlier than 2019-08-05 | BMU - Tehničar2 [50%]; BMU - Tehničar3 [50%] |
| 240 | Minimalizacija rizika 15 | 1d | 2019-09-03 | 2019-09-03 | start no earlier than 2019-09-03 | BMU - Tehničar2 [50%]; BMU - Tehničar3 [50%] |
| 241 | Minimalizacija rizika 16 | 1d | 2019-10-03 | 2019-10-03 | start no earlier than 2019-10-03 | BMU - Tehničar2 [50%]; BMU - Tehničar3 [50%] |
| 242 | Minimalizacija rizika 17 | 1d | 2019-11-04 | 2019-11-04 | start no earlier than 2019-11-04 | BMU - Tehničar2 [50%]; BMU - Tehničar3 [50%] |
| 243 | Minimalizacija rizika 18 | 1d | 2019-12-03 | 2019-12-03 | start no earlier than 2019-12-03 | BMU - Tehničar2 [50%]; BMU - Tehničar3 [50%] |
| 244 | Minimalizacija rizika 19 | 1d | 2020-01-03 | 2020-01-03 | start no earlier than 2020-01-03 | BMU - Tehničar2 [50%]; BMU - Tehničar3 [50%] |
| 245 | Minimalizacija rizika 20 | 1d | 2020-02-03 | 2020-02-03 | start no earlier than 2020-02-03 | BMU - Tehničar2 [50%]; BMU - Tehničar3 [50%] |
| 246 | Minimalizacija rizika 21 | 1d | 2020-03-03 | 2020-03-03 | start no earlier than 2020-03-03 | BMU - Tehničar2 [50%]; BMU - Tehničar3 [50%] |
| 247 | Minimalizacija rizika 22 | 1d | 2020-04-03 | 2020-04-03 | start no earlier than 2020-04-03 | BMU - Tehničar2 [50%]; BMU - Tehničar3 [50%] |
| 248 | Minimalizacija rizika 23 | 1d | 2020-05-04 | 2020-05-04 | start no earlier than 2020-05-04 | BMU - Tehničar2 [50%]; BMU - Tehničar3 [50%] |
| 249 | Minimalizacija rizika 24 | 1d | 2020-06-03 | 2020-06-03 | start no earlier than 2020-06-03 | BMU - Tehničar2 [50%]; BMU - Tehničar3 [50%] |
| 250 | Minimalizacija rizika 25 | 1d | 2020-07-03 | 2020-07-03 | start no earlier than 2020-07-03 | BMU - Tehničar2 [50%]; BMU - Tehničar3 [50%] |
| 251 | Minimalizacija rizika 26 | 1d | 2020-08-03 | 2020-08-03 | start no earlier than 2020-08-03 | BMU - Tehničar2 [50%]; BMU - Tehničar3 [50%] |
| 252 | Minimalizacija rizika 27 | 1d | 2020-09-03 | 2020-09-03 | start no earlier than 2020-09-03 | BMU - Tehničar2 [50%]; BMU - Tehničar3 [50%] |
| 253 | Minimalizacija rizika 28 | 1d | 2020-10-05 | 2020-10-05 | start no earlier than 2020-10-05 | BMU - Tehničar2 [50%]; BMU - Tehničar3 [50%] |
| 254 | Minimalizacija rizika 29 | 1d | 2020-11-03 | 2020-11-03 | start no earlier than 2020-11-03 | BMU - Tehničar2 [50%]; BMU - Tehničar3 [50%] |
| 255 | Minimalizacija rizika 30 | 1d | 2020-12-03 | 2020-12-03 | start no earlier than 2020-12-03 | BMU - Tehničar2 [50%]; BMU - Tehničar3 [50%] |
| 256 | Minimalizacija rizika 31 | 1d | 2021-01-04 | 2021-01-04 | start no earlier than 2021-01-04 | BMU - Tehničar2 [50%]; BMU - Tehničar3 [50%] |
| 257 | Minimalizacija rizika 32 | 1d | 2021-02-03 | 2021-02-03 | start no earlier than 2021-02-03 | BMU - Tehničar2 [50%]; BMU - Tehničar3 [50%] |
| 258 | Minimalizacija rizika 33 | 1d | 2021-03-04 | 2021-03-04 | start no earlier than 2021-03-04 | BMU - Tehničar3 [50%]; BMU - Tehničar1 [50%] |
| 259 | Minimalizacija rizika 34 | 1d | 2021-04-05 | 2021-04-05 | start no earlier than 2021-04-05 | BMU - Tehničar3 [50%]; BMU - Tehničar1 [50%] |
| 260 | Minimalizacija rizika 35 | 1d | 2021-05-03 | 2021-05-03 | start no earlier than 2021-05-03 | BMU - Tehničar3 [50%]; BMU - Tehničar1 [50%] |
| 261 | Minimalizacija rizika 36 | 1d | 2021-06-03 | 2021-06-03 | start no earlier than 2021-06-03 | BMU - Tehničar3 [50%]; BMU - Tehničar1 [50%] |
| 263 | **Upravljanje aktivnostima** | 757.75d | 2018-07-02 | 2021-06-01 |  |  |
| 264 | Upravljanje aktivnostima 1 | 1d | 2018-07-02 | 2018-07-02 | start no earlier than 2018-07-02 | BMU - Istraživač1 [50%]; BMU - Istraživač2 [50%] |
| 265 | Upravljanje aktivnostima 2 | 1d | 2018-08-01 | 2018-08-01 | start no earlier than 2018-08-01 | BMU - Istraživač1 [50%]; BMU - Istraživač2 [50%] |
| 266 | Upravljanje aktivnostima 3 | 1d | 2018-09-03 | 2018-09-03 | start no earlier than 2018-09-03 | BMU - Istraživač1 [50%]; BMU - Istraživač2 [50%] |
| 267 | Upravljanje aktivnostima 4 | 1d | 2018-10-01 | 2018-10-01 | start no earlier than 2018-10-01 | BMU - Istraživač1 [50%]; BMU - Istraživač2 [50%] |
| 268 | Upravljanje aktivnostima 5 | 1d | 2018-11-01 | 2018-11-01 | start no earlier than 2018-11-01 | BMU - Istraživač1 [50%]; BMU - Istraživač2 [50%] |
| 269 | Upravljanje aktivnostima 6 | 1d | 2018-12-03 | 2018-12-03 | start no earlier than 2018-12-03 | BMU - Istraživač1 [50%]; BMU - Istraživač2 [50%] |
| 270 | Upravljanje aktivnostima 7 | 1d | 2019-01-01 | 2019-01-01 | start no earlier than 2019-01-01 | BMU - Istraživač1 [50%]; BMU - Istraživač2 [50%] |
| 271 | Upravljanje aktivnostima 8 | 1d | 2019-02-01 | 2019-02-01 | start no earlier than 2019-02-01 | BMU - Istraživač1 [50%]; BMU - Istraživač2 [50%] |
| 272 | Upravljanje aktivnostima 9 | 1d | 2019-03-01 | 2019-03-01 | start no earlier than 2019-03-01 | BMU - Istraživač1 [50%]; BMU - Istraživač2 [50%] |
| 273 | Upravljanje aktivnostima 10 | 1d | 2019-04-01 | 2019-04-01 | start no earlier than 2019-04-01 | BMU - Istraživač1 [50%]; BMU - Istraživač2 [50%] |
| 274 | Upravljanje aktivnostima 11 | 1d | 2019-05-01 | 2019-05-01 | start no earlier than 2019-05-01 | BMU - Istraživač1 [50%]; BMU - Istraživač2 [50%] |
| 275 | Upravljanje aktivnostima 12 | 1d | 2019-06-03 | 2019-06-03 | start no earlier than 2019-06-03 | BMU - Istraživač1 [50%]; BMU - Istraživač2 [50%] |
| 276 | Upravljanje aktivnostima 13 | 1d | 2019-07-01 | 2019-07-01 | start no earlier than 2019-07-01 | BMU - Istraživač1 [50%]; BMU - Istraživač2 [50%] |
| 277 | Upravljanje aktivnostima 14 | 1d | 2019-08-01 | 2019-08-01 | start no earlier than 2019-08-01 | BMU - Istraživač1 [50%]; BMU - Istraživač2 [50%] |
| 278 | Upravljanje aktivnostima 15 | 1d | 2019-09-02 | 2019-09-02 | start no earlier than 2019-09-02 | BMU - Istraživač1 [50%]; BMU - Istraživač2 [50%] |
| 279 | Upravljanje aktivnostima 16 | 1d | 2019-10-01 | 2019-10-01 | start no earlier than 2019-10-01 | BMU - Istraživač1 [50%]; BMU - Istraživač2 [50%] |
| 280 | Upravljanje aktivnostima 17 | 1d | 2019-11-01 | 2019-11-01 | start no earlier than 2019-11-01 | BMU - Istraživač1 [50%]; BMU - Istraživač2 [50%] |
| 281 | Upravljanje aktivnostima 18 | 1d | 2019-12-02 | 2019-12-02 | start no earlier than 2019-12-02 | BMU - Istraživač1 [50%]; BMU - Istraživač2 [50%] |
| 282 | Upravljanje aktivnostima 19 | 1d | 2020-01-01 | 2020-01-01 | start no earlier than 2020-01-01 | BMU - Istraživač1 [50%]; BMU - Istraživač2 [50%] |
| 283 | Upravljanje aktivnostima 20 | 1d | 2020-02-03 | 2020-02-03 | start no earlier than 2020-02-03 | BMU - Istraživač1 [50%]; BMU - Istraživač2 [50%] |
| 284 | Upravljanje aktivnostima 21 | 1d | 2020-03-02 | 2020-03-02 | start no earlier than 2020-03-02 | BMU - Istraživač1 [50%]; BMU - Istraživač2 [50%] |
| 285 | Upravljanje aktivnostima 22 | 1d | 2020-04-01 | 2020-04-01 | start no earlier than 2020-04-01 | BMU - Istraživač1 [50%]; BMU - Istraživač2 [50%] |
| 286 | Upravljanje aktivnostima 23 | 1d | 2020-05-01 | 2020-05-01 | start no earlier than 2020-05-01 | BMU - Istraživač1 [50%]; BMU - Istraživač2 [50%] |
| 287 | Upravljanje aktivnostima 24 | 1d | 2020-06-01 | 2020-06-01 | start no earlier than 2020-06-01 | BMU - Istraživač1 [50%]; BMU - Istraživač2 [50%] |
| 288 | Upravljanje aktivnostima 25 | 1d | 2020-07-01 | 2020-07-01 | start no earlier than 2020-07-01 | BMU - Istraživač1 [50%]; BMU - Istraživač2 [50%] |
| 289 | Upravljanje aktivnostima 26 | 1d | 2020-08-03 | 2020-08-03 | start no earlier than 2020-08-03 | BMU - Istraživač1 [50%]; BMU - Istraživač2 [50%] |
| 290 | Upravljanje aktivnostima 27 | 1d | 2020-09-01 | 2020-09-01 | start no earlier than 2020-09-01 | BMU - Istraživač1 [50%]; BMU - Istraživač2 [50%] |
| 291 | Upravljanje aktivnostima 28 | 1d | 2020-10-01 | 2020-10-01 | start no earlier than 2020-10-01 | BMU - Istraživač1 [50%]; BMU - Istraživač2 [50%] |
| 292 | Upravljanje aktivnostima 29 | 1d | 2020-11-02 | 2020-11-02 | start no earlier than 2020-11-02 | BMU - Istraživač1 [50%]; BMU - Istraživač2 [50%] |
| 293 | Upravljanje aktivnostima 30 | 1d | 2020-12-01 | 2020-12-01 | start no earlier than 2020-12-01 | BMU - Istraživač1 [50%]; BMU - Istraživač2 [50%] |
| 294 | Upravljanje aktivnostima 31 | 1d | 2021-01-01 | 2021-01-01 | start no earlier than 2021-01-01 | BMU - Istraživač1 [50%]; BMU - Istraživač2 [50%] |
| 295 | Upravljanje aktivnostima 32 | 1d | 2021-02-01 | 2021-02-01 | start no earlier than 2021-02-01 | BMU - Istraživač1 [50%]; BMU - Istraživač2 [50%] |
| 296 | Upravljanje aktivnostima 33 | 1d | 2021-03-01 | 2021-03-01 | start no earlier than 2021-03-01 | BMU - Istraživač1 [50%]; BMU - Istraživač2 [50%] |
| 297 | Upravljanje aktivnostima 34 | 1d | 2021-04-01 | 2021-04-01 | start no earlier than 2021-04-01 | BMU - Istraživač1 [50%]; BMU - Istraživač2 [50%] |
| 298 | Upravljanje aktivnostima 35 | 1d | 2021-05-03 | 2021-05-03 | start no earlier than 2021-05-03 | BMU - Istraživač1 [50%]; BMU - Istraživač2 [50%] |
| 299 | Upravljanje aktivnostima 36 | 1d | 2021-06-01 | 2021-06-01 | start no earlier than 2021-06-01 | BMU - Istraživač1 [50%]; BMU - Istraživač2 [50%] |
| 300 | **Mesečni sastanak - video konferencija** | 757.75d | 2018-07-02 | 2021-06-01 |  |  |
| 301 | Mesečni sastanak - video konferencija 1 | 1d | 2018-07-02 | 2018-07-02 | start no earlier than 2018-07-02 | BMU - Menadzer1; BMU - Menadzer2 |
| 302 | Mesečni sastanak - video konferencija 2 | 1d | 2018-08-01 | 2018-08-01 | start no earlier than 2018-08-01 | BMU - Menadzer1; BMU - Menadzer2 |
| 303 | Mesečni sastanak - video konferencija 3 | 1d | 2018-09-03 | 2018-09-03 | start no earlier than 2018-09-03 | BMU - Menadzer1; BMU - Menadzer2 |
| 304 | Mesečni sastanak - video konferencija 4 | 1d | 2018-10-01 | 2018-10-01 | start no earlier than 2018-10-01 | BMU - Menadzer1; BMU - Menadzer2 |
| 305 | Mesečni sastanak - video konferencija 5 | 1d | 2018-11-01 | 2018-11-01 | start no earlier than 2018-11-01 | BMU - Menadzer1; BMU - Menadzer2 |
| 306 | Mesečni sastanak - video konferencija 6 | 1d | 2018-12-03 | 2018-12-03 | start no earlier than 2018-12-03 | BMU - Menadzer1; BMU - Menadzer2 |
| 307 | Mesečni sastanak - video konferencija 7 | 1d | 2019-01-01 | 2019-01-01 | start no earlier than 2019-01-01 | BMU - Menadzer1; BMU - Menadzer2 |
| 308 | Mesečni sastanak - video konferencija 8 | 1d | 2019-02-01 | 2019-02-01 | start no earlier than 2019-02-01 | BMU - Menadzer1; BMU - Menadzer2 |
| 309 | Mesečni sastanak - video konferencija 9 | 1d | 2019-03-01 | 2019-03-01 | start no earlier than 2019-03-01 | BMU - Menadzer1; BMU - Menadzer2 |
| 310 | Mesečni sastanak - video konferencija 10 | 1d | 2019-04-01 | 2019-04-01 | start no earlier than 2019-04-01 | BMU - Menadzer1; BMU - Menadzer2 |
| 311 | Mesečni sastanak - video konferencija 11 | 1d | 2019-05-01 | 2019-05-01 | start no earlier than 2019-05-01 | BMU - Menadzer1; BMU - Menadzer2 |
| 312 | Mesečni sastanak - video konferencija 12 | 1d | 2019-06-03 | 2019-06-03 | start no earlier than 2019-06-03 | BMU - Menadzer1; BMU - Menadzer2 |
| 313 | Mesečni sastanak - video konferencija 13 | 1d | 2019-07-01 | 2019-07-01 | start no earlier than 2019-07-01 | BMU - Menadzer1; BMU - Menadzer2 |
| 314 | Mesečni sastanak - video konferencija 14 | 1d | 2019-08-01 | 2019-08-01 | start no earlier than 2019-08-01 | BMU - Menadzer1; BMU - Menadzer2 |
| 315 | Mesečni sastanak - video konferencija 15 | 1d | 2019-09-02 | 2019-09-02 | start no earlier than 2019-09-02 | BMU - Menadzer1; BMU - Menadzer2 |
| 316 | Mesečni sastanak - video konferencija 16 | 1d | 2019-10-01 | 2019-10-01 | start no earlier than 2019-10-01 | BMU - Menadzer1; BMU - Menadzer2 |
| 317 | Mesečni sastanak - video konferencija 17 | 1d | 2019-11-01 | 2019-11-01 | start no earlier than 2019-11-01 | BMU - Menadzer1; BMU - Menadzer2 |
| 318 | Mesečni sastanak - video konferencija 18 | 1d | 2019-12-02 | 2019-12-02 | start no earlier than 2019-12-02 | BMU - Menadzer1; BMU - Menadzer2 |
| 319 | Mesečni sastanak - video konferencija 19 | 1d | 2020-01-01 | 2020-01-01 | start no earlier than 2020-01-01 | BMU - Menadzer1; BMU - Menadzer2 |
| 320 | Mesečni sastanak - video konferencija 20 | 1d | 2020-02-03 | 2020-02-03 | start no earlier than 2020-02-03 | BMU - Menadzer1; BMU - Menadzer2 |
| 321 | Mesečni sastanak - video konferencija 21 | 1d | 2020-03-02 | 2020-03-02 | start no earlier than 2020-03-02 | BMU - Menadzer1; BMU - Menadzer2 |
| 322 | Mesečni sastanak - video konferencija 22 | 1d | 2020-04-01 | 2020-04-01 | start no earlier than 2020-04-01 | BMU - Menadzer1; BMU - Menadzer2 |
| 323 | Mesečni sastanak - video konferencija 23 | 1d | 2020-05-01 | 2020-05-01 | start no earlier than 2020-05-01 | BMU - Menadzer1; BMU - Menadzer2 |
| 324 | Mesečni sastanak - video konferencija 24 | 1d | 2020-06-01 | 2020-06-01 | start no earlier than 2020-06-01 | BMU - Menadzer1; BMU - Menadzer2 |
| 325 | Mesečni sastanak - video konferencija 25 | 1d | 2020-07-01 | 2020-07-01 | start no earlier than 2020-07-01 | BMU - Menadzer1; BMU - Menadzer2 |
| 326 | Mesečni sastanak - video konferencija 26 | 1d | 2020-08-03 | 2020-08-03 | start no earlier than 2020-08-03 | BMU - Menadzer1; BMU - Menadzer2 |
| 327 | Mesečni sastanak - video konferencija 27 | 1d | 2020-09-01 | 2020-09-01 | start no earlier than 2020-09-01 | BMU - Menadzer1; BMU - Menadzer2 |
| 328 | Mesečni sastanak - video konferencija 28 | 1d | 2020-10-01 | 2020-10-01 | start no earlier than 2020-10-01 | BMU - Menadzer3 |
| 329 | Mesečni sastanak - video konferencija 29 | 1d | 2020-11-02 | 2020-11-02 | start no earlier than 2020-11-02 | BMU - Menadzer3 |
| 330 | Mesečni sastanak - video konferencija 30 | 1d | 2020-12-01 | 2020-12-01 | start no earlier than 2020-12-01 | BMU - Menadzer3 |
| 331 | Mesečni sastanak - video konferencija 31 | 1d | 2021-01-01 | 2021-01-01 | start no earlier than 2021-01-01 | BMU - Menadzer3 |
| 332 | Mesečni sastanak - video konferencija 32 | 1d | 2021-02-01 | 2021-02-01 | start no earlier than 2021-02-01 | BMU - Menadzer3 |
| 333 | Mesečni sastanak - video konferencija 33 | 1d | 2021-03-01 | 2021-03-01 | start no earlier than 2021-03-01 | BMU - Menadzer1; BMU - Menadzer2 |
| 334 | Mesečni sastanak - video konferencija 34 | 1d | 2021-04-01 | 2021-04-01 | start no earlier than 2021-04-01 | BMU - Menadzer1; BMU - Menadzer2 |
| 335 | Mesečni sastanak - video konferencija 35 | 1d | 2021-05-03 | 2021-05-03 | start no earlier than 2021-05-03 | BMU - Menadzer1; BMU - Menadzer2 |
| 336 | Mesečni sastanak - video konferencija 36 | 1d | 2021-06-01 | 2021-06-01 | start no earlier than 2021-06-01 | BMU - Menadzer1; BMU - Menadzer2 |

Removed: 103 Planiranje budžeta; 187 Rukovođenje projektom; 189 Minimalizacija rizika; 191 Upravljanje aktivnostima; 192 Nedeljni sastanak - video konferencija; 193 Nedeljni sastanak - video konferencija 1; 194 Nedeljni sastanak - video konferencija 2; 195 Nedeljni sastanak - video konferencija 3; 196 Nedeljni sastanak - video konferencija 4; 197 Nedeljni sastanak - video konferencija 5; 198 Nedeljni sastanak - video konferencija 6; 199 Nedeljni sastanak - video konferencija 7; 200 Nedeljni sastanak - video konferencija 8; 201 Nedeljni sastanak - video konferencija 9; 202 Nedeljni sastanak - video konferencija 10; 203 Nedeljni sastanak - video konferencija 11; 204 Nedeljni sastanak - video konferencija 12; 205 Nedeljni sastanak - video konferencija 13; 206 Nedeljni sastanak - video konferencija 14; 207 Nedeljni sastanak - video konferencija 15; 208 Nedeljni sastanak - video konferencija 16; 209 Nedeljni sastanak - video konferencija 17; 210 Nedeljni sastanak - video konferencija 18; 211 Nedeljni sastanak - video konferencija 19; 212 Nedeljni sastanak - video konferencija 20; 213 Nedeljni sastanak - video konferencija 21; 214 Nedeljni sastanak - video konferencija 22; 215 Nedeljni sastanak - video konferencija 23; 216 Nedeljni sastanak - video konferencija 24; 217 Nedeljni sastanak - video konferencija 25; 218 Nedeljni sastanak - video konferencija 26; 219 Nedeljni sastanak - video konferencija 27; 220 Nedeljni sastanak - video konferencija 28; 221 Nedeljni sastanak - video konferencija 29; 222 Nedeljni sastanak - video konferencija 30; 223 Nedeljni sastanak - video konferencija 31; 224 Nedeljni sastanak - video konferencija 32; 225 Nedeljni sastanak - video konferencija 33; 226 Nedeljni sastanak - video konferencija 34; 227 Nedeljni sastanak - video konferencija 35; 228 Nedeljni sastanak - video konferencija 36; 229 Nedeljni sastanak - video konferencija 37; 230 Nedeljni sastanak - video konferencija 38; 231 Nedeljni sastanak - video konferencija 39; 232 Nedeljni sastanak - video konferencija 40; 233 Nedeljni sastanak - video konferencija 41; 234 Nedeljni sastanak - video konferencija 42; 235 Nedeljni sastanak - video konferencija 43; 236 Nedeljni sastanak - video konferencija 44; 237 Nedeljni sastanak - video konferencija 45; 238 Nedeljni sastanak - video konferencija 46; 239 Nedeljni sastanak - video konferencija 47; 240 Nedeljni sastanak - video konferencija 48; 241 Nedeljni sastanak - video konferencija 49; 242 Nedeljni sastanak - video konferencija 50; 243 Nedeljni sastanak - video konferencija 51; 244 Nedeljni sastanak - video konferencija 52; 245 Nedeljni sastanak - video konferencija 53; 246 Nedeljni sastanak - video konferencija 54; 247 Nedeljni sastanak - video konferencija 55; 248 Nedeljni sastanak - video konferencija 56; 249 Nedeljni sastanak - video konferencija 57; 250 Nedeljni sastanak - video konferencija 58; 251 Nedeljni sastanak - video konferencija 59; 252 Nedeljni sastanak - video konferencija 60; 253 Nedeljni sastanak - video konferencija 61; 254 Nedeljni sastanak - video konferencija 62; 255 Nedeljni sastanak - video konferencija 63; 256 Nedeljni sastanak - video konferencija 64; 257 Nedeljni sastanak - video konferencija 65; 258 Nedeljni sastanak - video konferencija 66; 259 Nedeljni sastanak - video konferencija 67; 260 Nedeljni sastanak - video konferencija 68; 261 Nedeljni sastanak - video konferencija 69; 262 Nedeljni sastanak - video konferencija 70; 263 Nedeljni sastanak - video konferencija 71; 264 Nedeljni sastanak - video konferencija 72; 265 Nedeljni sastanak - video konferencija 73; 266 Nedeljni sastanak - video konferencija 74; 267 Nedeljni sastanak - video konferencija 75; 268 Nedeljni sastanak - video konferencija 76; 269 Nedeljni sastanak - video konferencija 77; 270 Nedeljni sastanak - video konferencija 78; 271 Nedeljni sastanak - video konferencija 79; 272 Nedeljni sastanak - video konferencija 80; 273 Nedeljni sastanak - video konferencija 81; 274 Nedeljni sastanak - video konferencija 82; 275 Nedeljni sastanak - video konferencija 83; 276 Nedeljni sastanak - video konferencija 84; 277 Nedeljni sastanak - video konferencija 85; 278 Nedeljni sastanak - video konferencija 86; 279 Nedeljni sastanak - video konferencija 87; 280 Nedeljni sastanak - video konferencija 88; 281 Nedeljni sastanak - video konferencija 89; 282 Nedeljni sastanak - video konferencija 90; 283 Nedeljni sastanak - video konferencija 91; 284 Nedeljni sastanak - video konferencija 92; 285 Nedeljni sastanak - video konferencija 93; 286 Nedeljni sastanak - video konferencija 94; 287 Nedeljni sastanak - video konferencija 95; 288 Nedeljni sastanak - video konferencija 96; 289 Nedeljni sastanak - video konferencija 97; 290 Nedeljni sastanak - video konferencija 98; 291 Nedeljni sastanak - video konferencija 99; 292 Nedeljni sastanak - video konferencija 100; 293 Nedeljni sastanak - video konferencija 101; 294 Nedeljni sastanak - video konferencija 102; 295 Nedeljni sastanak - video konferencija 103; 296 Nedeljni sastanak - video konferencija 104; 297 Nedeljni sastanak - video konferencija 105; 298 Nedeljni sastanak - video konferencija 106; 299 Nedeljni sastanak - video konferencija 107; 300 Nedeljni sastanak - video konferencija 108; 301 Nedeljni sastanak - video konferencija 109; 302 Nedeljni sastanak - video konferencija 110; 303 Nedeljni sastanak - video konferencija 111; 304 Nedeljni sastanak - video konferencija 112; 305 Nedeljni sastanak - video konferencija 113; 306 Nedeljni sastanak - video konferencija 114; 307 Nedeljni sastanak - video konferencija 115; 308 Nedeljni sastanak - video konferencija 116; 309 Nedeljni sastanak - video konferencija 117; 310 Nedeljni sastanak - video konferencija 118; 311 Nedeljni sastanak - video konferencija 119; 312 Nedeljni sastanak - video konferencija 120; 313 Nedeljni sastanak - video konferencija 121; 314 Nedeljni sastanak - video konferencija 122; 315 Nedeljni sastanak - video konferencija 123; 316 Nedeljni sastanak - video konferencija 124; 317 Nedeljni sastanak - video konferencija 125; 318 Nedeljni sastanak - video konferencija 126; 319 Nedeljni sastanak - video konferencija 127; 320 Nedeljni sastanak - video konferencija 128; 321 Nedeljni sastanak - video konferencija 129; 322 Nedeljni sastanak - video konferencija 130; 323 Nedeljni sastanak - video konferencija 131; 324 Nedeljni sastanak - video konferencija 132; 325 Nedeljni sastanak - video konferencija 133; 326 Nedeljni sastanak - video konferencija 134; 327 Nedeljni sastanak - video konferencija 135; 328 Nedeljni sastanak - video konferencija 136; 329 Nedeljni sastanak - video konferencija 137; 330 Nedeljni sastanak - video konferencija 138; 331 Nedeljni sastanak - video konferencija 139; 332 Nedeljni sastanak - video konferencija 140; 333 Nedeljni sastanak - video konferencija 141; 334 Nedeljni sastanak - video konferencija 142; 335 Nedeljni sastanak - video konferencija 143; 336 Nedeljni sastanak - video konferencija 144; 337 Nedeljni sastanak - video konferencija 145; 338 Nedeljni sastanak - video konferencija 146; 339 Nedeljni sastanak - video konferencija 147; 340 Nedeljni sastanak - video konferencija 148; 341 Nedeljni sastanak - video konferencija 149; 342 Nedeljni sastanak - video konferencija 150; 343 Nedeljni sastanak - video konferencija 151; 344 Nedeljni sastanak - video konferencija 152; 345 Nedeljni sastanak - video konferencija 153; 346 Nedeljni sastanak - video konferencija 154; 347 Nedeljni sastanak - video konferencija 155; 348 Nedeljni sastanak - video konferencija 156; 349 Nedeljni sastanak - video konferencija 157

Changed:

| ID | Task | Start | Finish | Duration | Total float | Predecessors | Other |
| --- | --- | --- | --- | --- | --- | --- | --- |
| 180 | Prikupljanje utisaka |  | 2021-06-30 → 2021-02-15 (-135d) | 194d → 97d |  |  | resources none → SR - Tehničar1 [50%]; SR - Tehničar2 [50%] |
| 181 | Promovisanje proizvoda | 2020-10-01 → 2021-02-16 (+138d) |  | 194d → 97d |  | none → 180 | resources none → SR - Tehničar3 [4%]; BMU - Administrator1 [15%]; SR - Administrator1 [15%]; BMU - Tehničar2 [66%] |
| 182 | Organizovanje marketinških kampanja |  |  |  |  |  | resources none → BMU - Menadzer1 [9%]; BMU - Menadzer2 [9%]; SR - Menadžer1 [36%]; BMU - Istraživač1 [46%] |
| 183 | Obezbeđivanje reklamnog materijala |  | 2021-01-21 → 2020-11-03 (-79d) | 80d → 24d | 114d → 170d |  | resources none → BMU - Tehničar1 |
| 184 | Učestvovanje na sajmovima i konferencijama |  |  |  |  |  | resources none → BMU - Istraživač1 [8%]; SR - Istraživač1 [27%]; SR - Istraživač2 [30%]; BMU - Tehničar1 [35%] |
| 224 | Minimalizacija budžeta |  | 2018-12-14 → 2018-08-16 (-120d) | 120d → 34d | 0d → 661d |  |  |
| 262 | Minimalizacija iskorišćenja resursa | 2018-12-17 → 2018-08-17 (-122d) | 2020-02-12 → 2018-10-03 (-497d) | 300d → 34d | 0d → 661d |  |  |
| 337 | Dorada MS Project fajla |  | 2021-06-30 → 2018-07-13 (-1083d) | 779d → 10d | 0d → 769d |  |  |
| 338 | Upravljanje merama kvailteta i postupcima | 2020-02-13 → 2018-10-04 (-497d) | 2021-06-30 → 2018-12-12 (-931d) | 359d → 50d | 0d → 661d |  |  |
| 339 | Upravljanje načinom komunikacije |  | 2018-11-16 → 2018-07-06 (-133d) | 100d → 5d | 679d → 774d |  |  |

## Version 5 (saved 2018-06-06)

Note of the change: Updated MS Project file

Last finish stays 2021-07-01.

Added:

| ID | Task | Duration | Start | Finish | Predecessors | Resources |
| --- | --- | --- | --- | --- | --- | --- |
| 103 | Planiranje budžeta | 27d | 2018-11-01 | 2018-12-07 | 104FF, 105FF | Xebia - Menadžer1; Xebia - Menadžer2 |

Changed:

| ID | Task | Start | Finish | Duration | Total float | Predecessors | Other |
| --- | --- | --- | --- | --- | --- | --- | --- |
| 2 | **Analiza tržišta** |  | 2018-08-30 → 2018-08-24 (-6d) | 44d → 40d | 2d → 0d |  |  |
| 3 | **Iniciranje analize tržišta** |  | 2018-07-06 → 2018-07-04 (-2d) | 5d → 3d | 2d → 9d |  |  |
| 4 | Selekcija ljudi |  | 2018-07-03 → 2018-07-02 (-1d) | 2d → 1d | 2d → 9d |  | resources none → BMU - Menadzer3 |
| 5 | Formiranje timova | 2018-07-04 → 2018-07-03 (-1d) | 2018-07-05 → 2018-07-03 (-2d) | 2d → 1d | 2d → 9d |  | resources none → BMU - Menadzer3 |
| 6 | Dobijanje odobrenja o validnosti timova | 2018-07-06 → 2018-07-04 (-2d) | 2018-07-06 → 2018-07-04 (-2d) |  | 2d → 9d |  | resources none → BMU - Istraživač1 |
| 7 | **Planiranje analize tržišta** | 2018-07-09 → 2018-07-05 (-4d) | 2018-07-20 → 2018-07-11 (-9d) | 10d → 5d | 2d → 9d |  |  |
| 8 | Definisanje svih potrebnih aktivnosti faze | 2018-07-09 → 2018-07-05 (-4d) | 2018-07-13 → 2018-07-05 (-8d) | 5d → 1d | 2d → 9d |  | resources none → SR - Istraživač1 |
| 9 | Dodeljivanje aktivnosti timovima | 2018-07-16 → 2018-07-06 (-10d) | 2018-07-17 → 2018-07-06 (-11d) | 2d → 1d | 2d → 9d |  | resources none → SR - Istraživač1 |
| 10 | Iniciranje kontakta sa komunalnim službama | 2018-07-09 → 2018-07-05 (-4d) | 2018-07-17 → 2018-07-06 (-11d) | 7d → 2d | 2d → 9d |  | resources none → SR - Menadžer2 |
| 11 | Dodeljivanje lokacija timovima | 2018-07-18 → 2018-07-09 (-9d) | 2018-07-18 → 2018-07-09 (-9d) |  | 2d → 9d |  | resources none → SR - Menadžer2 |
| 12 | Pisanje izveštaja o planu | 2018-07-19 → 2018-07-10 (-9d) | 2018-07-19 → 2018-07-10 (-9d) |  | 2d → 9d |  | resources none → SR - Tehničar1 |
| 13 | Dobijanje dozvole od višeg menadžmenta | 2018-07-20 → 2018-07-11 (-9d) | 2018-07-20 → 2018-07-11 (-9d) |  | 2d → 9d |  | resources none → SR - Tehničar1 |
| 14 | **Izvršavanje analize tržišta** | 2018-07-23 → 2018-07-12 (-11d) | 2018-08-23 → 2018-08-06 (-17d) | 24d → 18d | 2d → 9d |  |  |
| 15 | Prepoznavanje trenutnog stanja | 2018-07-23 → 2018-07-12 (-11d) | 2018-07-24 → 2018-07-12 (-12d) | 2d → 1d | 49d → 110d |  | resources none → SR - Tehničar2 |
| 16 | **Rad na terenu** |  | 2018-08-21 → 2018-08-03 (-18d) | 20d → 8d |  |  |  |
| 17 | **Rad na terenu 1** |  | 2018-07-31 → 2018-07-26 (-5d) | 5d → 2d | 49d → 102d |  |  |
| 18 | Sastanak sa komunalnom službom |  |  |  | 49d → 102d |  | resources none → ETF - Istraživač2 |
| 19 | Analiziranje konkretnog stanja | 2018-07-26 → 2018-07-25 (-1d) | 2018-07-30 → 2018-07-25 (-5d) | 3d → 1d | 49d → 102d | 18 → none | resources none → ETF - Istraživač3 |
| 20 | Pisanje lokalnog izveštaja | 2018-07-31 → 2018-07-26 (-5d) | 2018-07-31 → 2018-07-26 (-5d) |  | 49d → 102d | 19 → 18, 19 | resources none → ETF - Istraživač3 |
| 21 | **Rad na terenu 2** | 2018-08-01 → 2018-07-27 (-5d) | 2018-08-07 → 2018-07-30 (-8d) | 5d → 2d | 49d → 102d |  |  |
| 22 | Sastanak sa komunalnom službom | 2018-08-01 → 2018-07-27 (-5d) | 2018-08-01 → 2018-07-27 (-5d) |  | 49d → 102d |  | resources none → ETF - Tehničar2 |
| 23 | Analiziranje konkretnog stanja | 2018-08-02 → 2018-07-27 (-6d) | 2018-08-06 → 2018-07-27 (-10d) | 3d → 1d | 49d → 102d | 22 → none | resources none → ETF - Tehničar3 |
| 24 | Pisanje lokalnog izveštaja | 2018-08-07 → 2018-07-30 (-8d) | 2018-08-07 → 2018-07-30 (-8d) |  | 49d → 102d | 23 → 23, 22 | resources none → ETF - Tehničar3 |
| 25 | **Rad na terenu 3** | 2018-08-08 → 2018-07-31 (-8d) | 2018-08-14 → 2018-08-01 (-13d) | 5d → 2d | 49d → 102d |  |  |
| 26 | Sastanak sa komunalnom službom | 2018-08-08 → 2018-07-31 (-8d) | 2018-08-08 → 2018-07-31 (-8d) |  | 49d → 102d |  | resources none → ETF - Tehničar2 |
| 27 | Analiziranje konkretnog stanja | 2018-08-09 → 2018-07-31 (-9d) | 2018-08-13 → 2018-07-31 (-13d) | 3d → 1d | 49d → 102d | 26 → none | resources none → ETF - Administrator1 |
| 28 | Pisanje lokalnog izveštaja | 2018-08-14 → 2018-08-01 (-13d) | 2018-08-14 → 2018-08-01 (-13d) |  | 49d → 102d | 27 → 27, 26 | resources none → ETF - Tehničar3 |
| 29 | **Rad na terenu 4** | 2018-08-15 → 2018-08-02 (-13d) | 2018-08-21 → 2018-08-03 (-18d) | 5d → 2d | 49d → 102d |  |  |
| 30 | Sastanak sa komunalnom službom | 2018-08-15 → 2018-08-02 (-13d) | 2018-08-15 → 2018-08-02 (-13d) |  | 49d → 102d |  | resources none → SR - Tehničar1 |
| 31 | Analiziranje konkretnog stanja | 2018-08-16 → 2018-08-02 (-14d) | 2018-08-20 → 2018-08-02 (-18d) | 3d → 1d | 49d → 102d | 30 → none | resources none → SR - Tehničar2 |
| 32 | Pisanje lokalnog izveštaja | 2018-08-21 → 2018-08-03 (-18d) | 2018-08-21 → 2018-08-03 (-18d) |  | 49d → 102d | 31 → 31, 30 | resources none → SR - Tehničar1 |
| 33 | Sumiranje rezultata | 2018-08-22 → 2018-08-06 (-16d) | 2018-08-23 → 2018-08-06 (-17d) | 2d → 1d | none → 102d |  | resources none → SR - Istraživač2 |
| 34 | **Monitoring I kontrola analize tržišta** |  | 2018-08-30 → 2018-08-24 (-6d) | 44d → 40d | 4d → none |  |  |
| 35 | Uspostavljenje sistema za praćenje napretka |  |  |  | 44d → 111d |  | resources none → ETF - Menadžer1 |
| 36 | Praćenje napretka |  | 2018-08-30 → 2018-07-24 (-37d) | 39d → 12d | 44d → 111d |  | resources none → SR - Istraživač1 |
| 37 | Otkrivanje I rešavanje problema |  | 2018-08-30 → 2018-07-19 (-42d) | 44d → 14d | 44d → 114d |  | resources none → SR - Tehničar3 |
| 47 | Pisanje završnog izveštaja |  |  |  | 83d → 123d |  | resources none → ETF - Administrator1 |
| 48 | Izvršavanje revizije kompletne analize |  |  |  | 83d → 123d |  | resources none → ETF - Istraživač2 |
| 49 | Dobijanje odobrenja od menadžera |  |  |  | 83d → 123d |  | resources none → ETF - Tehničar1 |
| 51 | **Iniciranje analize korisničkih zahteva** |  | 2018-07-13 → 2018-07-05 (-8d) | 10d → 4d | 78d → 124d |  |  |
| 52 | Napisati one-page opis posla |  |  |  | 78d → 124d |  | resources none → SR - Administrator2 |
| 53 | Selekcija ljudi |  | 2018-07-06 → 2018-07-03 (-3d) | 4d → 1d | 78d → 124d |  | resources none → SR - Menadžer1 |
| 54 | Formiranje timova | 2018-07-09 → 2018-07-04 (-5d) | 2018-07-12 → 2018-07-04 (-8d) | 4d → 1d | 78d → 124d |  | resources none → SR - Menadžer1 |
| 55 | Dobijanje odobrenja o validnosti timova | 2018-07-13 → 2018-07-05 (-8d) | 2018-07-13 → 2018-07-05 (-8d) |  | 78d → 124d |  | resources none → SR - Tehničar2 |
| 56 | **Planiranje analize korisničkih zahteva** |  | 2018-07-20 → 2018-07-09 (-11d) | 15d → 6d | 73d → 122d |  |  |
| 57 | Definisanje svih potrebnih aktivnosti faze |  | 2018-07-06 → 2018-07-02 (-4d) | 5d → 1d | 73d → 122d |  | resources none → ETF - Administrator3 |
| 58 | Dodeljivanje aktivnosti timovima | 2018-07-09 → 2018-07-03 (-6d) | 2018-07-11 → 2018-07-03 (-8d) | 3d → 1d | 73d → 122d |  | resources none → SR - Tehničar2 |
| 59 | Priprema sistema za anketiranje | 2018-07-12 → 2018-07-04 (-8d) | 2018-07-18 → 2018-07-05 (-13d) | 5d → 2d | 73d → 122d |  | resources none → SR - Tehničar1 |
| 60 | Priprema baza podataka za skladištenje rezultata anketa | 2018-07-12 → 2018-07-04 (-8d) | 2018-07-18 → 2018-07-05 (-13d) | 5d → 2d | 73d → 122d |  | resources none → BMU - Tehničar3 |
| 61 | Pisanje izveštaja o planu | 2018-07-19 → 2018-07-06 (-13d) | 2018-07-19 → 2018-07-06 (-13d) |  | 73d → 122d |  | resources none → ETF - Tehničar2 |
| 62 | Dobijanje dozvole od višeg menadžmenta | 2018-07-20 → 2018-07-09 (-11d) | 2018-07-20 → 2018-07-09 (-11d) |  | 73d → 122d |  | resources none → SR - Administrator2 |
| 63 | **Izvršavanje analize korisničkih zahteva** |  | 2018-09-12 → 2018-07-31 (-43d) | 53d → 22d | 35d → 106d |  |  |
| 64 | **Izvršavanje anketa** |  | 2018-07-27 → 2018-07-11 (-16d) | 20d → 8d | 35d → 106d |  |  |
| 65 | Pisanje korisničkih anketa |  | 2018-07-04 → 2018-07-02 (-2d) | 3d → 1d | 35d → 106d |  | resources none → ETF - Tehničar2 |
| 66 | Izvršavanje anketa | 2018-07-05 → 2018-07-03 (-2d) | 2018-07-20 → 2018-07-06 (-14d) | 12d → 4d | 35d → 106d |  | resources none → ETF - Istraživač1 [50%]; SR - Istraživač2 [50%] |
| 67 | Analiziranje rezultata anketa | 2018-07-23 → 2018-07-09 (-14d) | 2018-07-26 → 2018-07-10 (-16d) | 4d → 2d | 35d → 106d |  | resources none → ETF - Tehničar2 |
| 68 | Dokumentovanje rezultata anketa | 2018-07-27 → 2018-07-11 (-16d) | 2018-07-27 → 2018-07-11 (-16d) |  | 35d → 106d |  | resources none → BMU - Administrator1 |
| 69 | Izvršavanje intervjua |  | 2018-07-27 → 2018-07-11 (-16d) | 20d → 8d | 35d → 106d |  | resources none → ETF - Menadžer2 |
| 70 | Organizacija tribina |  | 2018-07-27 → 2018-07-11 (-16d) | 20d → 8d | 35d → 106d |  | resources none → SR - Istraživač3 |
| 71 | Sumiranje rezultata | 2018-07-30 → 2018-07-12 (-18d) | 2018-08-01 → 2018-07-12 (-20d) | 3d → 1d | 35d → 106d |  | resources none → ETF - Istraživač1 |
| 72 | Pisanje slučajeva korišćenja | 2018-08-02 → 2018-07-13 (-20d) | 2018-08-27 → 2018-07-23 (-35d) | 18d → 7d | 35d → 106d |  | resources none → ETF - Menadžer3 [50%]; ETF - Menadžer2 [50%] |
| 73 | Kreiranje Requirements Breakdown Structure (RBS) dokumenta | 2018-08-28 → 2018-07-24 (-35d) | 2018-09-10 → 2018-07-30 (-42d) | 10d → 5d | 35d → 106d |  | resources none → ETF - Menadžer3 [50%]; ETF - Menadžer2 [50%] |
| 74 | Pisanje konačnog izveštaja | 2018-09-11 → 2018-07-31 (-42d) | 2018-09-12 → 2018-07-31 (-43d) | 2d → 1d | 35d → 106d |  | resources none → ETF - Menadžer3 |
| 76 | Uspostavljenje sistema za praćenje napretka |  | 2018-07-11 → 2018-07-04 (-7d) | 8d → 3d | 0d → 95d |  | resources none → SR - Menadžer3 |
| 77 | Praćenje napretka | 2018-07-12 → 2018-07-05 (-7d) | 2018-10-31 → 2018-08-15 (-77d) | 80d → 30d | 0d → 95d |  | resources none → ETF - Administrator3 [50%]; SR - Menadžer1 [50%] |
| 78 | Otkrivanje I rešavanje problema |  | 2018-10-31 → 2018-08-10 (-82d) | 88d → 30d | 0d → 98d |  | resources none → ETF - Administrator2 [50%]; BMU - Tehničar1 [50%] |
| 79 | **Izveštavanje o statusu analize** |  | 2018-10-26 → 2018-10-31 (+5d) | 80.75d → 84.25d | 0d → none |  |  |
| 80 | Izveštavanje o statusu analize 1 |  |  |  |  |  | resources none → BMU - Istraživač2 |
| 81 | Izveštavanje o statusu analize 2 |  |  |  |  |  | resources none → BMU - Istraživač2 |
| 82 | Izveštavanje o statusu analize 3 |  |  |  |  |  | resources none → BMU - Istraživač2 |

| ID | Task | Start | Finish | Duration | Total float | Predecessors | Other |
| --- | --- | --- | --- | --- | --- | --- | --- |
| 83 | Izveštavanje o statusu analize 4 |  |  |  |  |  | resources none → BMU - Istraživač2 |
| 84 | Izveštavanje o statusu analize 5 |  |  |  |  |  | resources none → BMU - Istraživač2 |
| 85 | Izveštavanje o statusu analize 6 |  |  |  |  |  | resources none → BMU - Istraživač2 |
| 86 | Izveštavanje o statusu analize 7 |  |  |  |  |  | resources none → BMU - Istraživač2 |
| 87 | Izveštavanje o statusu analize 8 |  |  |  |  |  | resources none → BMU - Istraživač2 |
| 88 | Izveštavanje o statusu analize 9 |  |  |  |  |  | resources none → BMU - Istraživač2 |
| 89 | Izveštavanje o statusu analize 10 |  |  |  |  |  | resources none → BMU - Istraživač2 |
| 90 | Izveštavanje o statusu analize 11 |  |  |  |  |  | resources none → BMU - Istraživač2 |
| 91 | Izveštavanje o statusu analize 12 |  |  |  |  |  | resources none → BMU - Istraživač2 |
| 92 | Izveštavanje o statusu analize 13 |  |  |  |  |  | resources none → BMU - Istraživač2 |
| 93 | Izveštavanje o statusu analize 14 |  |  |  |  |  | resources none → BMU - Istraživač2 |
| 94 | Izveštavanje o statusu analize 15 |  |  |  |  |  | resources none → BMU - Istraživač2 |
| 95 | Izveštavanje o statusu analize 16 |  |  |  |  |  | resources none → BMU - Istraživač2 |
| 96 | Izveštavanje o statusu analize 17 |  |  |  |  |  | resources none → BMU - Istraživač2 |
| 98 | Pisanje završnog izveštaja |  |  |  | 78d → 118d |  | resources none → ETF - Menadžer3 |
| 99 | Izvršavanje revizije kompletne analize |  |  |  | 78d → 118d |  | resources none → ETF - Menadžer3 |
| 100 | Dobijanje odobrenja od menadžera |  |  |  | 78d → 118d |  | resources none → SR - Menadžer2 |
| 104 | Planiranje resursa |  | 2018-12-26 → 2018-11-12 (-44d) | 40d → 8d | 0d → 146d |  | resources none → SR - Tehničar2; SR - Tehničar3 |
| 105 | Planiranje rizika |  | 2018-12-26 → 2018-11-22 (-34d) | 40d → 16d | 0d → 138d |  | resources none → ETF - Menadžer2 [50%]; BMU - Istraživač1 [50%] |
| 106 | Raspodela posla po participantima |  | 2018-12-19 → 2018-11-20 (-29d) | 35d → 14d | 0d → 137d |  | resources none → Vaisala - Menadžer1 [50%]; Vaisala - Administrator3 [25%]; Vaisala - Tehničar2 [25%] |
| 107 | Određivanje aktivnosti unutar svih faza projekta | 2018-12-20 → 2018-11-21 (-29d) | 2019-01-31 → 2018-12-06 (-56d) | 30d → 12d | 0d → 137d |  | resources none → BMU - Tehničar1 [50%]; ETF - Menadžer2 [50%] |
| 108 | Određivanje mere kvaliteta i postupaka |  | 2019-01-31 → 2019-01-09 (-22d) | 25d → 9d |  |  | resources none → Xebia - Administrator1 [50%]; Vaisala - Istraživač2 [50%] |
| 109 | Određivanje načina komunikacije |  | 2019-01-31 → 2019-01-09 (-22d) | 25d → 9d |  |  | resources none → BMU - Administrator3 [25%]; BMU - Istraživač2 [50%]; BMU - Tehničar2 [25%] |
| 111 | **WP3 - Modelovanje i dizajn** |  |  |  |  |  | resources none → Licenca za softver za modelovanje aplikacije [1 licenca] |
| 112 | **Modelovanje i dizajn veb-portala** |  | 2019-06-28 → 2019-04-02 (-87d) | 106d → 43d | 0d → 98d |  |  |
| 113 | Izrada dijagrama slučajeva korišćenja |  | 2019-03-14 → 2019-02-18 (-24d) | 30d → 12d | 0d → 98d |  | resources none → Xebia - Istraživač2 [25%]; Xebia - Tehničar2 [25%]; Xebia - Administrator3 [25%]; Xebia - Tehničar1 [25%] |
| 114 | Izrada dijagrama klasa | 2019-03-15 → 2019-02-19 (-24d) | 2019-06-28 → 2019-04-02 (-87d) | 76d → 31d | 0d → 98d |  | resources none → Xebia - Istraživač1 [25%]; Xebia - Istraživač3 [25%]; Xebia - Tehničar3 [50%] |
| 115 | Izrada dijagrama sekvenci | 2019-03-15 → 2019-02-19 (-24d) | 2019-06-28 → 2019-04-02 (-87d) | 76d → 31d | 0d → 98d |  | resources none → Xebia - Istraživač2 [50%]; Xebia - Tehničar1 [25%]; Xebia - Tehničar2 [25%] |
| 116 | **Modelovanje i dizajn pametne kante** |  | 2019-06-28 → 2019-04-02 (-87d) | 106d → 43d | 0d → 98d |  |  |
| 117 | Dizajn spoljašnjosti kante |  | 2019-06-28 → 2019-04-02 (-87d) | 106d → 43d | 0d → 63d |  | resources none → Vaisala - Administrator1 [50%]; Vaisala - Tehničar1 [50%]; Vaisala - Tehničar2 [50%]; Vaisala - Istraživač3 [50%] |
| 118 | Modelovanje arhitekture računara |  | 2019-04-05 → 2019-02-28 (-36d) | 46d → 20d | 0d → 63d |  | resources none → Vaisala - Menadžer1 [25%]; Vaisala - Istraživač1 [25%]; Vaisala - Tehničar3 [25%]; Vaisala - Istraživač2 [25%] |
| 119 | Dizajn unutrašnjosti kante | 2019-04-08 → 2019-03-01 (-38d) | 2019-06-28 → 2019-04-02 (-87d) | 60d → 23d | 0d → 98d |  | resources none → Vaisala - Tehničar1 [50%]; Vaisala - Istraživač3 [50%] |
| 122 | Izrada prototipa pametne kante |  | 2019-08-23 → 2019-07-25 (-29d) | 40d → 19d | 0d → 34d |  | resources none → Vaisala - Istraživač2 [50%]; Vaisala - Tehničar2 [25%]; Vaisala - Tehničar3 [25%] |
| 123 | Izrada interfejsa prema softverskoj komponenti |  | 2019-08-23 → 2019-07-25 (-29d) | 40d → 19d | 0d → 34d |  | resources none → Vaisala - Administrator3 [50%]; Vaisala - Tehničar2 [50%] |
| 124 | Izrada grafičkog korisničkog interfejsa |  | 2019-08-23 → 2019-07-25 (-29d) | 40d → 19d | 0d → 34d |  | resources none → ETF - Tehničar1 [50%]; ETF - Tehničar2 [50%]; ETF - Administrator1 [25%]; ETF - Istraživač2 [50%] |
| 125 | Integracija i validacija prototipa |  | 2019-09-30 → 2019-09-11 (-19d) | 26d → 13d |  |  | resources none → ETF - Administrator1 [50%]; Vaisala - Tehničar3 [50%] |
| 127 | Izrada glavnih stranica |  | 2019-08-16 → 2019-08-05 (-11d) | 35d → 26d | 0d → 9d |  | resources none → Xebia - Tehničar1 [50%]; Xebia - Istraživač1 [25%]; Xebia - Istraživač2 [25%] |
| 128 | Izrada stranica za korisnike |  | 2019-08-16 → 2019-08-05 (-11d) | 35d → 26d | 0d → 9d |  | resources none → Xebia - Menadžer2 [50%]; Vaisala - Tehničar3 [25%]; ETF - Tehničar2 [25%] |
| 129 | Izrada stranica za administratore |  | 2019-08-16 → 2019-08-05 (-11d) | 35d → 26d | 0d → 9d |  | resources none → Xebia - Tehničar1 [50%]; Xebia - Administrator1 [25%]; Xebia - Administrator2 [25%] |
| 130 | Validacija i integracija prototipa |  |  |  |  |  | resources none → SR - Istraživač1 [50%]; SR - Tehničar2 [25%]; SR - Tehničar3 [25%]; SR - Administrator3 [25%] |
| 133 | Kreiranje hardverske komponente |  | 2020-02-05 → 2019-11-27 (-70d) | 90d → 42d | 0d → 89d |  | resources none → Vaisala - Administrator1 [50%]; Vaisala - Tehničar1 [50%]; Vaisala - Tehničar2 [50%]; Vaisala - Istraživač3 [50%] |
| 134 | Izrada grafičkog korisničkog interfejsa |  | 2019-12-23 → 2019-11-07 (-46d) | 60d → 28d | 112d → 144d |  | resources none → ETF - Tehničar1 [50%]; ETF - Tehničar2 [50%]; ETF - Administrator1 [25%]; ETF - Istraživač2 [50%] |
| 135 | **Konfiguracija hardverske komponente** | 2020-02-06 → 2019-11-28 (-70d) | 2020-05-29 → 2020-01-27 (-123d) | 82d → 41d | 0d → 89d |  |  |
| 136 | Dodavanje matične ploče | 2020-02-06 → 2019-11-28 (-70d) | 2020-03-18 → 2019-12-17 (-92d) | 30d → 14d | 0d → 89d |  | resources none → Vaisala - Tehničar1 [50%]; Vaisala - Istraživač1 [50%]; Matične ploče za pametne kante [0.1%] |
| 137 | Dodavanje čipova | 2020-03-19 → 2019-12-18 (-92d) | 2020-04-08 → 2019-12-27 (-103d) | 15d → 8d | 0d → 89d |  | resources none → Vaisala - Tehničar2 [50%]; Vaisala - Istraživač2 [50%]; Čipovi za pametne kante [0.1%] |
| 138 | Dodavanje LCD displeja | 2020-04-09 → 2019-12-31 (-100d) | 2020-04-29 → 2020-01-10 (-110d) | 15d → 8d | 0d → 89d |  | resources none → Vaisala - Tehničar2 [50%]; Vaisala - Tehničar3 [50%]; LCD displejevi za pametne kante [0.1%] |
| 139 | Dodavanje senzora | 2020-04-30 → 2020-01-13 (-108d) | 2020-05-20 → 2020-01-22 (-119d) | 15d → 8d | 0d → 89d |  | resources none → Vaisala - Tehničar1 [50%]; Vaisala - Tehničar2 [50%]; Senzori za pametne kante |
| 140 | Dodavanje mini modema | 2020-05-21 → 2020-01-23 (-119d) | 2020-05-29 → 2020-01-27 (-123d) | 7d → 3d | 0d → 89d |  | resources none → Vaisala - Administrator2 [50%]; Vaisala - Istraživač3 [25%]; Vaisala - Tehničar1 [25%]; Modemi za pametne kante |
| 142 | **Frontend implementacija** |  | 2020-03-31 → 2019-11-06 (-146d) | 150d → 48d | 0d → 130d |  |  |
| 143 | Izrada glavnih stranica |  | 2019-11-08 → 2019-09-23 (-46d) | 50d → 16d | 0d → 130d |  | resources none → Xebia - Tehničar1 [50%]; Xebia - Istraživač1 [25%]; Xebia - Istraživač2 [25%] |
| 144 | Izrada stranica za korisnike | 2019-11-11 → 2019-09-24 (-48d) | 2020-01-21 → 2019-10-15 (-98d) | 50d → 16d | 0d → 130d |  | resources none → Xebia - Menadžer2 [50%]; Vaisala - Tehničar3 [25%]; BMU - Istraživač3 [25%] |
| 145 | Izrada stranica za administratore | 2020-01-22 → 2019-10-16 (-98d) | 2020-03-31 → 2019-11-06 (-146d) | 50d → 16d | 0d → 130d |  | resources none → Xebia - Tehničar1 [50%]; Xebia - Administrator1 [25%]; Xebia - Administrator2 [25%] |
| 146 | **Backend implementacija** |  | 2020-03-31 → 2019-11-12 (-140d) | 150d → 52d | 0d → 126d |  |  |
| 147 | Izrada kontrolera |  | 2020-02-18 → 2019-10-25 (-116d) | 120d → 40d | 0d → 128d |  | resources none → Xebia - Administrator1 [25%]; Vaisala - Istraživač1 [25%]; Xebia - Tehničar1 [25%]; Xebia - Tehničar2 [25%] |
| 148 | Omogućavanje komunikacije sa bazom |  | 2019-09-27 → 2019-09-10 (-17d) | 20d → 7d | 0d → 126d |  | resources none → Xebia - Tehničar3 [50%]; Xebia - Administrator3 [50%] |
| 149 | Implementacija biznis logike | 2019-09-30 → 2019-09-11 (-19d) | 2019-12-20 → 2019-10-08 (-73d) | 60d → 20d | 0d → 126d |  | resources none → Xebia - Istraživač2 [20%]; Xebia - Istraživač1 [20%]; Xebia - Tehničar2 [20%]; BMU - Istraživač2 [20%]; BMU - Tehničar3 [20%] |
| 150 | Izrada modela | 2019-12-23 → 2019-10-09 (-75d) | 2020-02-18 → 2019-10-29 (-112d) | 40d → 15d | 0d → 126d |  | resources none → Xebia - Administrator1 [50%]; Xebia - Tehničar2 [50%] |
| 151 | Povezivanje sa sistemom za naplatu | 2020-02-19 → 2019-10-30 (-112d) | 2020-03-31 → 2019-11-12 (-140d) | 30d → 10d | 0d → 126d |  | resources none → Xebia - Istraživač3 [50%]; Xebia - Istraživač2 [25%]; Xebia - Tehničar3 [25%] |
| 152 | Integracija frontend i backend dela | 2020-04-01 → 2019-11-13 (-140d) | 2020-05-29 → 2019-12-03 (-178d) | 43d → 15d | 0d → 126d |  | resources none → Xebia - Menadžer2 [25%]; Xebia - Administrator1 [25%]; BMU - Tehničar2 [25%]; Xebia - Tehničar2 [25%] |
| 179 | **WP13 - Evaluacija i disiminacija** |  |  |  |  |  | resources none → Licenca za softver za generisanje statistike [1 licenca] |
| 186 | **WP14 - Upravljanje projektom** |  |  |  |  |  | resources none → Licenca za softver za generisanje statistike [1 licenca] |
| 224 | Minimalizacija budžeta |  |  |  |  |  | resources none → BMU - Istraživač3 [50%]; BMU - Tehničar1 [50%] |
| 262 | Minimalizacija iskorišćenja resursa |  |  |  |  |  | resources none → BMU - Istraživač3 [50%]; BMU - Tehničar1 [50%] |
| 337 | Dorada MS Project fajla |  |  |  | 769d → 764d |  | resources none → BMU - Istraživač3 [20%]; BMU - Tehničar2 [30%]; BMU - Administrator2 [50%] |
| 338 | Upravljanje merama kvailteta i postupcima |  |  |  |  |  | resources none → BMU - Administrator3 [10%]; BMU - Istraživač3 [90%] |
| 339 | Upravljanje načinom komunikacije | 2018-07-02 → 2018-07-16 (+14d) | 2018-07-06 → 2018-07-20 (+14d) |  | 774d → 764d | none → 337 | resources none → BMU - Administrator2 [60%]; BMU - Istraživač1 [40%] |

## Version 6 (saved 2018-06-06)

Note of the change: finished ms project file

Last finish stays 2021-07-01.

Added:

| ID | Task | Duration | Start | Finish | Resources |
| --- | --- | --- | --- | --- | --- |
| 172 | Proizvodnja pametnih kanti | 43d | 2021-05-03 | 2021-06-30 | Proizvodnja pametnih kanti; Čipovi za pametne kante [0.1%]; LCD displejevi za pametne kante [0.1%]; Matične ploče za pametne kante [0.1%]; Modemi za pametne kante [249500%]; Senzori za pametne kante [249500%] |

Changed:

| ID | Task | Start | Finish | Duration | Total float | Predecessors | Other |
| --- | --- | --- | --- | --- | --- | --- | --- |
| 139 | Dodavanje senzora |  |  |  | 89d → 97d |  | resources Vaisala - Tehničar1 [50%]; Vaisala - Tehničar2 [50%]; Senzori za pametne kante → Vaisala - Tehničar1 [50%]; Vaisala - Tehničar2 [50%]; Senzori za pametne kante [500%] |
| 140 | Dodavanje mini modema |  |  |  | 89d → 97d |  | resources Vaisala - Administrator2 [50%]; Vaisala - Istraživač3 [25%]; Vaisala - Tehničar1 [25%]; Modemi za pametne kante → Vaisala - Administrator2 [50%]; Vaisala - Istraživač3 [25%]; Vaisala - Tehničar1 [25%]; Modemi za pametne kante [500%] |
| 154 | **WP8 - Testiranje pametne kante** |  |  |  |  |  | resources none → Licenca za softver za testiranje [1 licenca] |
| 155 | Izrada testova |  | 2020-07-10 → 2020-07-24 (+14d) | 30d → 40d | 0d → 48d |  | resources none → SR - Istraživač1 [50%]; ETF - Istraživač1 [50%] |
| 156 | Pokretanje testova | 2020-07-13 → 2020-06-11 (-32d) |  | 58d → 80d | 0d → none | 155 → none | constraint none → finish no earlier than 2020-09-30; resources none → ETF - Istraživač2 |
| 157 | **WP9 - Testiranje veb-portala** |  |  |  |  |  | resources none → Licenca za softver za testiranje [1 licenca] |
| 158 | Izrada testova |  | 2020-08-07 → 2020-07-31 (-7d) | 50d → 45d | 0d → 43d |  | resources none → BMU - Istraživač1 [50%]; Xebia - Istraživač1 [50%] |
| 159 | Pokretanje testova | 2020-08-10 → 2020-07-09 (-32d) |  | 38d → 60d | 0d → none | 158 → none | constraint none → finish no earlier than 2020-09-30; resources none → BMU - Istraživač2 [30%]; Xebia - Istraživač2 [70%] |
| 162 | Koordinisanje postupka integracije |  |  |  |  |  | resources none → Vaisala - Menadžer1 |
| 163 | Omogućavanje integracije hardvera |  |  |  |  |  | resources none → ETF - Istraživač3 [50%]; Xebia - Istraživač1 [50%] |
| 164 | Omogućavanje integracije softvera |  |  |  |  |  | resources none → ETF - Istraživač3 [50%]; Xebia - Istraživač1 [50%] |
| 165 | Integracija |  |  |  |  |  | resources none → ETF - Istraživač3 [50%]; Xebia - Istraživač1 [50%] |
| 166 | **WP11 - Integraciono testiranje** |  |  |  |  |  | resources none → Licenca za softver za testiranje [1 licenca]; Eksterna verifikacija modela sistema |
| 167 | Izrada testova |  |  |  |  |  | resources none → ETF - Tehničar1 [50%]; ETF - Istraživač3 [50%] |
| 168 | Pokretanje testova |  |  |  |  |  | resources none → ETF - Tehničar1 [50%]; SR - Istraživač1 [50%] |
| 169 | Popravljanje problema |  |  |  |  |  | resources none → ETF - Tehničar1 [50%]; SR - Istraživač1 [50%] |
| 173 | Postavljanje kanti |  |  |  |  |  | resources none → SR - Tehničar3 [50%]; Vaisala - Tehničar2 [50%] |
| 174 | Instalacija softvera |  |  |  |  |  | resources none → SR - Tehničar2 [50%]; Vaisala - Tehničar3 [50%]; Mrežna oprema [0.1%]; Server sale; Serveri [0.1%] |
| 175 | Postavljanje veb-portala na Internet |  | 2021-06-30 → 2021-05-24 (-37d) | 43d → 16d | 0d → 27d |  | resources none → Vaisala - Tehničar1 |
| 176 | Administracija postupka puštanja sistema u rad |  |  |  |  |  | resources none → BMU - Menadzer3 |
| 177 | Obuka osoblja i korisnika |  | 2021-06-30 → 2021-05-28 (-33d) | 43d → 20d | 0d → 23d |  | resources none → ETF - Tehničar1 [50%]; ETF - Tehničar2 [50%] |
| 178 | Obezbeđivanje mehanizma za podršku |  |  |  |  |  | resources none → Materijali za podršku klijenata; BMU - Administrator1 [50%]; BMU - Tehničar3 [50%] |
| 182 | Promovisanje proizvoda |  |  |  |  |  | resources SR - Tehničar3 [4%]; BMU - Administrator1 [15%]; SR - Administrator1 [15%]; BMU - Tehničar2 [66%] → SR - Tehničar3 [4%]; BMU - Administrator1 [15%]; SR - Administrator1 [15%]; BMU - Tehničar2 [66%]; Reklamni video materijali |
| 184 | Obezbeđivanje reklamnog materijala |  |  |  |  |  | resources BMU - Tehničar1 → BMU - Tehničar1; Reklamni materijal |
| 185 | Učestvovanje na sajmovima i konferencijama |  |  |  |  |  | resources BMU - Istraživač1 [8%]; SR - Istraživač1 [27%]; SR - Istraživač2 [30%]; BMU - Tehničar1 [35%] → BMU - Istraživač1 [8%]; SR - Istraživač1 [27%]; SR - Istraživač2 [30%]; BMU - Tehničar1 [35%]; Ulaznice za konferencije |
| 187 | **WP14 - Upravljanje projektom** |  |  |  |  |  | resources Licenca za softver za generisanje statistike [1 licenca] → Licenca za softver za generisanje statistike [1 licenca]; Licenca za Microsoft Project [1 licenca] |
